Schedule from MS Project, 2016-01-09 to 2017-03-17, A marks actual dates.
shen

## Calendars

- 标准: Mon-Fri 08:00-12:00, 13:00-17:00; Sat-Sun off. Exceptions (off unless hours are given): 2017-01-02, 2017-01-22 08:00-12:00, 13:00-17:00, 2017-01-27, 2017-01-30 to 2017-02-02, 2017-02-04 08:00-12:00, 13:00-17:00.

## Resources

| Resource |
| --- |
| A |
| B |
| 高明 |
| 李高奇 |
| 王鑫 |
| 夏海洋 |
| 杨杰 |
| 詹市伟 |
| TBD |
| 邹凯强 |
| 贲智晨 |
| 贲志晨 |
| 王亮 |

## Schedule

| ID | WBS | Task | Duration | Start | Finish | Predecessors | Complete | Remaining | Total slack | Free slack | Constraint | Resources | Work | Actual work |
| --- | --- | --- | --- | --- | --- | --- | --- | --- | --- | --- | --- | --- | --- | --- |
| 1 | 1 | **广菲克DMS CLOUD项目开发计划** | 306d? | 2016-01-09 A | 2017-03-17 |  | 54% | 141.5d? | 3.4d |  |  | 李高奇 | 6060h | 1991h |
| 2 | 1.1 | **系统管理** | 14d | 2016-12-15 A | 2017-01-04 |  | 80% | 2.75d | 43.85d |  |  |  | 312h | 250.8h |
| 3 | 1.1.1 | 维修站基本信息 | 2d | 2016-12-15 A | 2016-12-16 |  | 85% | 0.3d | 20d | 0d | start no earlier than 2016-12-15 | 高明 | 16h | 13.6h |
| 4 | 1.1.2 | 部门定义 | 2d | 2016-12-30 A | 2017-01-03 |  | 85% | 0.3d | 25d | 0d | start no earlier than 2016-12-30 | 邹凯强 | 16h | 13.6h |
| 5 | 1.1.3 | 职务定义 | 2d | 2016-12-15 A | 2016-12-16 |  | 85% | 0.3d | 21d | 0d | start no earlier than 2016-12-15 | 夏海洋 | 16h | 13.6h |
| 6 | 1.1.4 | 员工信息管理 | 3d | 2016-12-15 A | 2016-12-19 |  | 85% | 0.45d | 40.12d | 0d | start no earlier than 2016-12-15 | 詹市伟 | 24h | 20.4h |
| 7 | 1.1.5 | 大客户政策车系 | 2d | 2016-12-15 A | 2016-12-16 |  | 85% | 0.3d | 20.23d | 0d | start no earlier than 2016-12-15 | 杨杰 | 16h | 13.6h |
| 8 | 1.1.6 | 大客户申请数量 | 1.5d | 2016-12-19 A | 2016-12-20 | 7 | 85% | 0.23d | 18.95d | 0d |  | 杨杰 | 12h | 10.2h |
| 9 | 1.1.7 | 渠道细分定义 | 2d | 2016-12-19 A | 2016-12-20 |  | 85% | 0.3d | 20.68d | 0d | start no earlier than 2016-12-19 | 王鑫 | 16h | 13.6h |
| 10 | 1.1.8 | 车辆信息挂靠单位 | 2d | 2016-12-19 A | 2016-12-20 | 5 | 85% | 0.3d | 19.3d | 0d | start no earlier than 2016-12-15 | 夏海洋 | 16h | 13.6h |
| 11 | 1.1.9 | 发票类型 | 1.5d | 2016-12-20 A | 2016-12-21 | 8 | 85% | 0.23d | 17.68d | 0d |  | 杨杰 | 12h | 10.2h |
| 12 | 1.1.10 | 付款方式 | 2d | 2016-12-19 A | 2016-12-20 |  | 85% | 0.3d | 4.88d | 0d | start no earlier than 2016-12-19 | 贲智晨 | 16h | 13.6h |
| 13 | 1.1.11 | 车辆颜色定义 | 1.5d | 2016-12-21 A | 2016-12-22 | 12 | 85% | 0.23d | 3.38d | 0d |  | 贲智晨 | 12h | 10.2h |
| 14 | 1.1.12 | 品牌车系车型 | 1.5d | 2016-12-22 A | 2016-12-23 | 11 | 85% | 0.23d | 16.4d | 0d |  | 杨杰 | 12h | 10.2h |
| 15 | 1.1.13 | 角色权限管理 | 4d | 2016-12-20 A | 2016-12-23 | 6 | 80% | 0.8d | 36.92d | 0d |  | 詹市伟 | 32h | 25.6h |
| 16 | 1.1.14 | 用户权限管理 | 4d | 2016-12-26 A | 2016-12-29 | 15 | 80% | 0.8d | 33.73d | 0d |  | 詹市伟 | 32h | 25.6h |
| 17 | 1.1.15 | 更改口令 | 1d | 2016-12-19 A | 2016-12-19 | 3 | 85% | 0.15d | 24.45d | 0d |  | 李高奇 | 8h | 6.8h |
| 18 | 1.1.16 | 基本参数设置 | 3d | 2016-12-30 A | 2017-01-04 | 16 | 85% | 0.45d | 31.18d | 2d |  | 詹市伟 | 24h | 20.4h |
| 19 | 1.1.17 | 销售顾问/经理工作平台 | 4d | 2016-12-21 A | 2016-12-26 | 10 | 50% | 2d | 16.3d | 0d | start no earlier than 2016-12-15 | 夏海洋 | 32h | 16h |
| 20 | 1.2 | **客户管理** | 59.5d | 2016-12-19 A | 2017-03-16 |  | 50% | 29.81d | 3.5d |  |  |  | 800h | 399.2h |
| 21 | 1.2.1 | 展厅流量登记 | 4d | 2016-12-27 A | 2016-12-30 | 19 | 70% | 1.2d | 15.3d | 0d |  | 夏海洋 | 32h | 22.4h |
| 22 | 1.2.2 | 展厅接待 | 4.5d | 2016-12-22 A | 2016-12-28 | 13 | 75% | 1.12d | 5.1d | 0d |  | 贲智晨 | 36h | 27h |
| 23 | 1.2.3 | 客户信息 | 7d | 2016-12-20 A | 2016-12-28 | 17 | 85% | 1.05d | 46.5d | 0d |  | 李高奇 | 56h | 47.6h |
| 24 | 1.2.4 | 跟进活动 | 5d | 2016-12-29 A | 2017-01-05 | 23 | 85% | 0.75d | 44.9d | 0d |  | 李高奇 | 40h | 34h |
| 25 | 1.2.5 | 日程安排 | 3d | 2017-02-14 | 2017-02-17 | 62 |  |  | 22.5d | 0d |  | 詹市伟 | 24h |  |
| 26 | 1.2.6 | 跟进任务定义 | 2.5d | 2016-12-21 A | 2016-12-23 | 9 | 85% | 0.38d | 22.85d | 0d |  | 王鑫 | 20h | 17h |
| 27 | 1.2.7 | 客户意向综合查询 | 2d | 2016-12-23 A | 2016-12-27 | 26 | 85% | 0.3d | 21.15d | 0d |  | 王鑫 | 16h | 13.6h |
| 28 | 1.2.8 | 试乘试驾改造(新需求) | 38d | 2017-01-18 A | 2017-03-16 | 73 | 5% | 36.1d | 1.5d |  |  | 王鑫 | 304h | 15.2h |
| 29 | 1.2.9 | 客户休眠申请审批 | 2d | 2017-01-03 A | 2017-01-04 | 21 | 85% | 0.3d | 15d | 0d |  | 夏海洋 | 16h | 13.6h |
| 30 | 1.2.10 | 保有客户维护 | 7d | 2016-12-19 A | 2016-12-27 | 3 | 85% | 1.05d | 8.5d | 0d |  | 高明 | 56h | 47.6h |
| 31 | 1.2.11 | 保有客户关怀 | 5d | 2016-12-28 A | 2017-01-04 | 30 | 85% | 0.75d | 20d | 0d |  | 高明 | 40h | 34h |
| 32 | 1.2.12 | 销售回访任务分配 | 2d | 2016-12-27 A | 2016-12-29 | 27 | 85% | 0.3d | 13.03d | 0d |  | 王鑫 | 16h | 13.6h |
| 33 | 1.2.13 | 销售回访任务录入 | 3.5d | 2016-12-29 A | 2017-01-04 | 32 | 85% | 0.53d | 10.05d | 0d |  | 王鑫 | 28h | 23.8h |
| 34 | 1.2.14 | 销售回访结果查询 | 2d | 2017-01-05 A | 2017-01-06 | 29 | 80% | 0.4d | 15d | 0d |  | 夏海洋 | 16h | 12.8h |
| 35 | 1.2.15 | 大客户报备 | 5d | 2017-01-05 A | 2017-01-11 | 31 | 80% | 1d | 19d | 0d |  | 高明 | 40h | 32h |
| 36 | 1.2.16 | 大客户申请 | 5d | 2017-01-12 A | 2017-01-18 | 35 | 70% | 1.5d | 19d | 0d |  | 高明 | 40h | 28h |
| 37 | 1.2.17 | 大客户组织架构权限申请 | 2.5d | 2017-01-05 A | 2017-01-09 | 33 | 85% | 0.38d | 7.92d | 0d |  | 王鑫 | 20h | 17h |

| ID | WBS | Task | Duration | Start | Finish | Predecessors | Complete | Remaining | Total slack | Free slack | Constraint | Resources | Work | Actual work |
| --- | --- | --- | --- | --- | --- | --- | --- | --- | --- | --- | --- | --- | --- | --- |
| 38 | 1.3 | **整车管理** | 301.5d | 2016-01-09 A | 2017-03-13 |  | 82% | 54.52d | 7.9d |  |  |  | 636h | 521h |
| 39 | 1.3.1 | 销售订单 | 8d | 2017-01-06 A | 2017-01-17 | 24 | 85% | 1.2d | 38.1d | 0d |  | 李高奇 | 64h | 54.4h |
| 40 | 1.3.2 | 服务订单 | 3d | 2017-03-03 A | 2017-03-08 | 56 | 75% | 0.75d | 7.5d | 0d |  | 贲智晨 | 24h | 18h |
| 41 | 1.3.3 | 订单审核 | 3d | 2017-01-18 A | 2017-01-20 | 39 | 85% | 0.45d | 35.55d | 0d |  | 李高奇 | 24h | 20.4h |
| 42 | 1.3.4 | 交车确认 | 5d | 2017-01-25 A | 2017-02-06 | 43 | 85% | 0.75d | 29d |  |  | 李高奇 | 40h | 34h |
| 43 | 1.3.5 | 订单取消 | 3d | 2017-01-22 A | 2017-01-24 | 41 | 85% | 0.45d | 8.75d | 0d |  | 李高奇 | 24h | 20.4h |
| 44 | 1.3.6 | 销售退回 | 4d | 2017-01-19 A | 2017-01-23 | 36 | 85% | 0.6d | 5.9d | 0d |  | 高明 | 32h | 27.2h |
| 45 | 1.3.7 | 销售综合查询 | 3d | 2017-01-09 A | 2017-01-11 | 34 | 80% | 0.6d | 13.5d | 0d |  | 夏海洋 | 24h | 19.2h |
| 46 | 1.3.8 | 服务项目管理 | 3d | 2017-03-08 A | 2017-03-13 | 40 | 80% | 0.6d | 4.5d |  |  | 贲智晨 | 24h | 19.2h |
| 47 | 1.3.9 | 服务项目定义 | 2d | 2017-01-14 A | 2017-01-17 | 55 | 85% | 0.3d | 10.12d | 0d | finish no earlier than 2017-01-16 | 王亮 | 16h | 13.6h |
| 48 | 1.3.10 | 订单财务审核 | 2d | 2017-01-24 A | 2017-01-25 | 44 | 85% | 0.3d | 3.9d | 0d |  | 高明 | 16h | 13.6h |
| 49 | 1.3.11 | 车辆主数据 | 2d | 2017-01-12 A | 2017-01-13 | 45 | 85% | 0.3d | 11.8d | 0d |  | 夏海洋 | 16h | 13.6h |
| 50 | 1.3.12 | 库存维护 | 3.5d | 2016-12-23 A | 2016-12-28 | 14 | 85% | 0.53d | 56.4d | 0d |  | 杨杰 | 28h | 23.8h |
| 51 | 1.3.13 | 车辆入库 | 4d | 2017-01-11 A | 2017-01-16 | 53 | 85% | 0.6d | 19.8d | 0d |  | 杨杰 | 32h | 27.2h |
| 52 | 1.3.14 | 车辆出库 | 3.5d | 2017-01-17 A | 2017-01-20 | 51 | 85% | 0.53d | 17d | 0d |  | 杨杰 | 28h | 23.8h |
| 53 | 1.3.15 | 车辆移库 | 3.5d | 2016-12-29 A | 2017-01-04 | 50 | 85% | 0.53d | 27.7d | 0d |  | 杨杰 | 28h | 23.8h |
| 54 | 1.3.16 | 车辆移位 | 2d | 2017-01-04 A | 2017-01-06 | 53 | 85% | 0.3d | 47.5d |  |  | 杨杰 | 16h | 13.6h |
| 55 | 1.3.17 | PDI检查 | 3d | 2016-01-09 A | 2016-01-13 |  | 80% | 0.6d | 276.4d | 261d |  | 王亮 | 24h | 19.2h |
| 56 | 1.3.18 | 库存日志 | 3d | 2017-02-28 A | 2017-03-03 | 97 | 85% | 0.45d | 10.5d | 0d |  | 贲智晨 | 24h | 20.4h |
| 57 | 1.3.19 | 促销价格维护 | 2d | 2017-02-04 | 2017-02-07 | 78 |  |  | 24.5d | 0d |  | 詹市伟 | 16h |  |
| 58 | 1.3.20 | 预收款登记 | 3d | 2017-01-09 A | 2017-01-12 | 37 | 85% | 0.45d | 5.38d | 0.5d |  | 王鑫 | 24h | 20.4h |
| 59 | 1.3.21 | 结算收款 | 4d | 2017-01-26 A | 2017-02-06 | 48 | 85% | 0.6d | 5.4d | 0d |  | 高明 | 32h | 27.2h |
| 60 | 1.3.22 | 开票登记 | 5d | 2017-02-07 A | 2017-02-13 | 59 | 85% | 0.75d | 1.4d | 0d |  | 高明 | 40h | 34h |
| 61 | 1.3.23 | 活动计划 | 2.5d | 2017-02-07 A | 2017-02-09 | 57 | 85% | 0.38d | 24.62d | 0d |  | 詹市伟 | 20h | 17h |
| 62 | 1.3.24 | 活动执行总结 | 2.5d | 2017-02-10 A | 2017-02-14 | 61 | 85% | 0.38d | 22.5d | 0d |  | 詹市伟 | 20h | 17h |

| ID | WBS | Task | Duration | Start | Finish | Predecessors | Complete | Remaining | Total slack | Free slack | Constraint | Resources | Work | Actual work |
| --- | --- | --- | --- | --- | --- | --- | --- | --- | --- | --- | --- | --- | --- | --- |
| 63 | 1.4 | **报表管理** | 27d | 2017-01-04 A | 2017-02-14 |  | 75% | 6.63d | 17d |  |  |  | 360h | 271.6h |
| 64 | 1.4.1 | 展厅来源分析表 | 2d | 2017-01-04 A | 2017-01-05 | 4 | 85% | 0.3d | 17.23d | 0d |  | 邹凯强 | 16h | 13.6h |
| 65 | 1.4.2 | 有望客户跟踪进度 | 3d | 2017-01-09 A | 2017-01-11 | 18 | 85% | 0.45d | 26.62d | 0d |  | 詹市伟 | 24h | 20.4h |
| 66 | 1.4.3 | 车辆库存明细表 | 2.5d | 2017-01-06 A | 2017-01-10 | 64 | 85% | 0.38d | 24.3d | 11d |  | 邹凯强 | 20h | 17h |
| 67 | 1.4.4 | 车辆入库明细表 | 2d | 2017-01-10 A | 2017-02-07 | 110 | 85% | 0.3d | 12.03d | 0d |  | 贲智晨 | 16h | 13.6h |
| 68 | 1.4.5 | 整车销售报表 | 2.5d | 2017-01-12 A | 2017-01-18 | 47 | 85% | 0.38d | 13.2d | 0d |  | 王亮 | 20h | 17h |
| 69 | 1.4.6 | 销售统计分析表 | 2d | 2017-01-23 A | 2017-01-26 | 74 | 85% | 0.3d | 6.97d | 0d | finish no earlier than 2017-01-26 | 王亮 | 16h | 13.6h |
| 70 | 1.4.7 | 销售顾问业绩统计 | 2.5d | 2017-02-03 A | 2017-02-06 | 69 | 85% | 0.38d | 4.85d | 0d |  | 王亮 | 20h | 17h |
| 71 | 1.4.8 | 销售毛利统计 | 2.5d | 2017-01-12 A | 2017-01-16 | 65 | 85% | 0.38d | 24.5d | 0d |  | 詹市伟 | 20h | 17h |
| 72 | 1.4.9 | 收款统计 | 2.5d | 2017-01-24 A | 2017-01-26 | 66 | 85% | 0.38d | 9.7d | 0d |  | 邹凯强 | 20h | 17h |
| 73 | 1.4.10 | 新交车客户400核实月报 | 3.5d | 2017-01-13 A | 2017-01-18 | 58 | 85% | 0.53d | 1.9d | 0d |  | 王鑫 | 28h | 23.8h |
| 74 | 1.4.11 | *车辆进销存分析 | 2.5d | 2017-01-19 A | 2017-01-22 | 68 | 85% | 0.38d | 7.5d | 0.5d |  | 王亮 | 20h | 17h |
| 75 | 1.4.12 | 留存订单简表 | 4d | 2017-01-16 A | 2017-01-20 | 71 | 85% | 0.6d | 24.5d | 0d |  | 詹市伟 | 32h | 27.2h |
| 76 | 1.4.13 | *销售业绩一览 | 4d | 2017-01-20 | 2017-01-25 | 75 |  |  | 24.5d | 0d |  | 詹市伟 | 32h |  |
| 77 | 1.4.14 | *转化率报表 | 2.5d | 2017-01-25 A | 2017-02-08 | 67 | 85% | 0.38d | 11.3d | 0d |  | 贲智晨 | 20h | 17h |
| 78 | 1.4.15 | *新增订单简表 | 3d | 2017-01-25 A | 2017-02-04 | 76 | 75% | 0.75d | 24.5d | 0d |  | 詹市伟 | 24h | 18h |
| 79 | 1.4.16 | *客流HSL趋势分析 | 4d | 2017-02-09 A | 2017-02-14 | 77 | 70% | 1.2d | 8.5d | 0d |  | 贲智晨 | 32h | 22.4h |
| 81 | 1.5 | **计划任务和接口** | 67d? | 2016-12-09 A | 2017-03-17 |  | 57% | 28.83d? | 0d |  |  |  | 812h | 490h |
| 82 | 1.5.1 | 保有客户关怀计划任务(计划任务，EXECUTE_CRC_TASK) | 2d | 2017-01-16 A | 2017-01-17 | 49 | 85% | 0.3d | 10.1d | 0d |  | 夏海洋 | 16h | 13.6h |
| 83 | 1.5.2 | 6个月未生成订单转为休眠客户（计划任务 SUBMIT_CUSTOMER_TO_DCC） | 2d | 2017-01-18 A | 2017-01-19 | 82 | 85% | 0.3d | 8.4d | 0d |  | 夏海洋 | 16h | 13.6h |
| 84 | 1.5.3 | 监控交车确认时保修登记信息上报情况(未成功上报的重新上报) （计划任务 CHECK_OUTBOUND_UPLOAD） | 2d | 2017-01-20 A | 2017-01-22 | 83 | 80% | 0.4d | 6.8d | 0d |  | 夏海洋 | 16h | 12.8h |
| 85 | 1.5.4 | 每天将400逾期未进行二次补录的数据标为逾期（计划任务 CHECK_UPLOAD_WETHER_TIMEOUT） | 2d | 2017-01-23 A | 2017-01-24 | 84 | 80% | 0.4d | 6.8d | 0d |  | 夏海洋 | 16h | 12.8h |
| 86 | 1.5.5 | 车型组主数据（品牌、车系、车型、配置） | 2d | 2017-01-25 A | 2017-01-26 | 85 | 80% | 0.4d | 5.2d | 0d |  | 夏海洋 | 16h | 12.8h |
| 87 | 1.5.6 | 车型价格信息下发 | 2d | 2017-02-03 A | 2017-02-04 | 86 | 80% | 0.4d | 3.6d | 0d |  | 夏海洋 | 16h | 12.8h |
| 88 | 1.5.7 | 市场活动（活动主单、车型清单） | 2d | 2017-02-06 A | 2017-02-07 | 87 | 80% | 0.4d | 2d | 0d |  | 夏海洋 | 16h | 12.8h |
| 89 | 1.5.8 | 二手车 置换车品牌 | 2d | 2017-02-08 A | 2017-02-09 | 88 | 80% | 0.4d | 2d | 0d |  | 夏海洋 | 16h | 12.8h |
| 90 | 1.5.9 | 贴息利率信息下发 | 1d | 2017-02-15 A | 2017-02-15 | 79 | 80% | 0.2d | 6.9d | 0d |  | 贲智晨 | 8h | 6.4h |
| 91 | 1.5.10 | 车辆发运信息下发 | 1d | 2017-02-16 A | 2017-02-16 | 90 | 80% | 0.2d | 6.1d | 0d |  | 贲智晨 | 8h | 6.4h |
| 92 | 1.5.11 | 战败DCC潜在客户信息上报接收 | 1d | 2017-02-17 A | 2017-02-17 | 91 | 80% | 0.2d | 5.3d | 0d |  | 贲智晨 | 8h | 6.4h |
| 93 | 1.5.12 | DCC潜在客户信息下发 | 1d | 2017-02-20 A | 2017-02-20 | 92 | 80% | 0.2d | 4.5d | 0d |  | 贲智晨 | 8h | 6.4h |
| 94 | 1.5.13 | DCC建档客户信息下发(×) | 1d | 2017-02-21 | 2017-02-21 | 93 |  |  | 5.7d | 0d |  | 贲智晨 | 8h |  |
| 95 | 1.5.14 | DCC建档客户信息反馈接收 | 1.5d | 2017-02-22 A | 2017-02-23 | 94 | 80% | 0.3d | 8.5d | 0d |  | 贲智晨 | 12h | 9.6h |
| 96 | 1.5.15 | LMS邀约到店撞单接口的反馈上报接收(反馈状态，1表示实销，2表示撞单，3表示休眠) | 1.5d | 2017-02-23 | 2017-02-24 | 95 |  |  | 8.5d | 0d |  | 贲智晨 | 12h |  |
| 97 | 1.5.16 | 销售信息撞单上报接收（反馈状态，1表示成功，2表示失败，3表示休眠） | 1.5d | 2017-02-27 | 2017-02-28 | 96 |  |  | 8.5d | 0d |  | 贲智晨 | 12h |  |
| 98 | 1.5.17 | 车辆验收上报（DMS验收后，上报验收明细给上端） | 2d | 2016-12-29 A | 2016-12-30 | 22 | 80% | 0.4d | 35d | 0d |  | 贲智晨 | 16h | 12.8h |
| 99 | 1.5.18 | 经销商之间车辆调拨下发 | 2d | 2017-01-03 A | 2017-01-04 | 98 | 80% | 0.4d | 33.4d | 0d |  | 贲智晨 | 16h | 12.8h |
| 100 | 1.5.19 | 经销商车辆实销数据 | 2d | 2017-01-05 A | 2017-01-06 | 99 | 80% | 0.4d | 31.8d | 0d |  | 贲智晨 | 16h | 12.8h |
| 101 | 1.5.20 | 【异步】大客户报备数据上报 | 1.5d | 2017-01-09 A | 2017-01-10 | 100 | 80% | 0.3d | 30.6d | 0d |  | 贲智晨 | 12h | 9.6h |
| 102 | 1.5.21 | 【异步】大客户报备审批数据下发 | 2d | 2017-01-10 A | 2017-01-12 | 101 | 80% | 0.4d | 29d | 0d |  | 贲智晨 | 16h | 12.8h |
| 103 | 1.5.22 | 【异步】大客户报备返利数据上报 | 2d | 2017-01-12 A | 2017-01-16 | 102 | 80% | 0.4d | 27.4d | 0d |  | 贲智晨 | 16h | 12.8h |
| 104 | 1.5.23 | 【异步】大客户报备返利审批数据下发 | 2d | 2017-01-16 A | 2017-01-18 | 103 | 80% | 0.4d | 25.8d | 0d |  | 贲智晨 | 16h | 12.8h |
| 105 | 1.5.24 | 【异步】二手车置换返利数据上报 | 2d | 2017-01-18 A | 2017-01-20 | 104 | 80% | 0.4d | 24.2d | 0d |  | 贲智晨 | 16h | 12.8h |
| 106 | 1.5.25 | 【异步】二手车置换返利审批数据下发 | 2d | 2017-01-20 A | 2017-01-23 | 105 | 80% | 0.4d | 22.6d | 0d |  | 贲智晨 | 16h | 12.8h |
| 107 | 1.5.26 | 发票多次扫描上报 | 2d | 2017-01-23 A | 2017-01-25 | 106 | 80% | 0.4d | 21d | 0d |  | 贲智晨 | 16h | 12.8h |
| 108 | 1.5.27 | PAD建档率报表上报 | 2d | 2017-01-25 A | 2017-02-03 | 107 | 80% | 0.4d | 19.4d | 0d |  | 贲智晨 | 16h | 12.8h |
| 109 | 1.5.28 | 大客户政策车系下发 | 1.5d | 2017-02-03 A | 2017-02-04 | 108 | 80% | 0.3d | 18.2d | 0d |  | 贲智晨 | 12h | 9.6h |
| 110 | 1.5.29 | 大客户政策车型数据下发 | 1.5d | 2017-02-06 A | 2017-02-07 | 109 | 80% | 0.3d | 0.6d | 0d |  | 贲智晨 | 12h | 9.6h |
| 111 | 1.5.30 | 计划任务每周一上报大客户拜访信息（计划任务 SADMS053 ） | 2d | 2017-02-06 A | 2017-02-08 | 70 | 85% | 0.3d | 3.15d | 0d |  | 王亮 | 16h | 13.6h |
| 112 | 1.5.31 | 克莱斯勒明检和神秘上报（计划任务 SADMS054） | 1d | 2017-02-08 A | 2017-02-09 | 111 | 85% | 0.15d | 2.3d | 0d |  | 王亮 | 8h | 6.8h |
| 113 | 1.5.32 | 订车接口数据接收(?) | 1d | 2017-02-09 | 2017-02-10 | 112 |  |  | 1.5d | 0d |  | 王亮 | 8h |  |
| 114 | 1.5.33 | 经销商零售信息变更上报接 | 2d | 2017-03-10 A | 2017-03-13 | 146 | 85% | 0.3d | 3.2d | 0d |  | 高明 | 16h | 13.6h |
| 115 | 1.5.34 | 大客户组织架构权限上传 | 2d | 2017-03-14 A | 2017-03-15 | 114 | 80% | 0.4d | 1.6d | 0d |  | 高明 | 16h | 12.8h |
| 116 | 1.5.35 | 大客户组织架构权限审批信息 | 2d | 2017-03-16 A | 2017-03-17 | 115 | 80% | 0.4d | 0d |  |  | 高明 | 16h | 12.8h |
| 117 | 1.5.36 | 发票识别结果下发 | 1d | 2017-02-10 A | 2017-02-13 | 113 | 80% | 0.2d | 2.3d | 0d |  | 王亮 | 8h | 6.4h |
| 118 | 1.5.37 | DMS对CRM数据验证接口 | 1d | 2017-02-22 | 2017-02-23 | 131 |  |  | 4.5d | 0d |  | 邹凯强 | 8h |  |
| 119 | 1.5.38 | 展厅销售人员信息上报接口 | 1d | 2017-02-03 A | 2017-02-03 | 72 | 80% | 0.2d | 8.9d | 0d |  | 邹凯强 | 8h | 6.4h |
| 120 | 1.5.39 | 创建客户信息（客户接待信息/需求分析）DMS新增 | 1d | 2017-02-04 A | 2017-02-04 | 119 | 80% | 0.2d | 9.7d | 0d |  | 邹凯强 | 8h | 6.4h |
| 121 | 1.5.40 | 创建客户信息（试乘试驾）DMS新增（？） | 1.5d | 2017-02-06 | 2017-02-07 | 120 |  |  | 0.5d | 0d |  | 邹凯强 | 12h |  |
| 122 | 1.5.41 | 创建客户信息（置换需求）DMS新增 | 1d | 2017-02-07 A | 2017-02-08 | 121 | 80% | 0.2d | 6.9d | 0d |  | 邹凯强 | 8h | 6.4h |
| 123 | 1.5.42 | 创建客户信息（金融报价）DMS新增（X） | 1d | 2017-02-08 | 2017-02-09 | 122 |  |  | 8.1d | 0d |  | 邹凯强 | 8h |  |
| 124 | 1.5.43 | 创建客户信息（客户培育）DMS新增（SOTDCS007） | 1d | 2017-02-09 A | 2017-02-10 | 123 | 80% | 0.2d | 8.1d | 0d |  | 邹凯强 | 8h | 6.4h |
| 125 | 1.5.44 | 更新客户信息（客户接待信息/需求分析）更新 | 1d | 2017-02-10 A | 2017-02-13 | 124 | 80% | 0.2d | 6.1d | 0d |  | 邹凯强 | 8h | 6.4h |
| 126 | 1.5.45 | 更新客户信息（试乘试驾）DMS更新（X） | 1.5d | 2017-02-13 | 2017-02-14 | 125 |  |  | 7.3d | 0d |  | 邹凯强 | 12h |  |
| 127 | 1.5.46 | 更新客户信息（置换需求）DMS更新(和新增是同一个接口) | 1d | 2017-02-15 A | 2017-02-15 | 126 | 80% | 0.2d | 6.5d | 0d |  | 邹凯强 | 8h | 6.4h |
| 128 | 1.5.47 | 更新客户信息（金融报价）DMS更新（X） | 1d | 2017-02-16 | 2017-02-16 | 127 |  |  | 6.5d | 0d |  | 邹凯强 | 8h |  |
| 129 | 1.5.48 | 更新客户信息（客户培育）DMS更新（X） | 1d | 2017-02-17 | 2017-02-17 | 128 |  |  | 6.5d | 0d |  | 邹凯强 | 8h |  |
| 130 | 1.5.49 | 销售人员分配信息DMS更新 | 1d | 2017-02-20 A | 2017-02-20 | 129 | 80% | 0.2d | 4.5d | 0d |  | 邹凯强 | 8h | 6.4h |
| 131 | 1.5.50 | 创建客户信息（试驾车辆信息）DMS新增 | 1.5d | 2017-02-21 A | 2017-02-22 | 130 | 80% | 0.3d | 4.5d | 0d |  | 邹凯强 | 12h | 9.6h |
| 132 | 1.5.51 | 更新客户信息(休眠，订单，交车客户状态数据传递)DMS更新 | 1d | 2017-02-13 A | 2017-02-14 | 117 | 80% | 0.2d | 1.5d | 0d |  | 王亮 | 8h | 6.4h |
| 133 | 1.5.52 | DMS产品、销售人员、经销商信息验证接口（X） | 1d | 2017-02-14 | 2017-02-15 | 132 |  |  | 1.5d | 0d |  | 王亮 | 8h |  |

| ID | WBS | Task | Duration | Start | Finish | Predecessors | Complete | Remaining | Total slack | Free slack | Resources | Work | Actual work |
| --- | --- | --- | --- | --- | --- | --- | --- | --- | --- | --- | --- | --- | --- |
| 134 | 1.5.53 | 数据同步验证接口（X） | 1d | 2017-02-15 | 2017-02-16 | 133 |  |  | 1.5d | 0d | 王亮 | 8h |  |
| 135 | 1.5.54 | 创建客户信息（客户接待信息/需求分析）APP新增 | 1d | 2017-02-16 A | 2017-02-17 | 134 | 80% | 0.2d | 1.5d | 0d | 王亮 | 8h | 6.4h |
| 136 | 1.5.55 | 创建客户信息（试乘试驾）APP新增（？） | 1.5d | 2017-02-17 | 2017-02-20 | 135 |  |  | 1.5d | 0d | 王亮 | 12h |  |
| 137 | 1.5.56 | 创建客户信息（置换需求）APP新增 | 1.5d | 2017-02-21 A | 2017-02-22 | 136 | 80% | 0.3d | 1.5d | 0d | 王亮 | 12h | 9.6h |
| 138 | 1.5.57 | 创建客户信息（金融报价）APP新增（X） | 2d | 2017-02-14 | 2017-02-15 | 60 |  |  | 1.4d | 0d | 高明 | 16h |  |
| 139 | 1.5.58 | 创建客户信息（客户培育）APP新增 | 2d | 2017-02-16 A | 2017-02-17 | 138 | 80% | 0.4d | 8.1d | 0d | 高明 | 16h | 12.8h |
| 140 | 1.5.59 | 创建客户信息（试驾车辆信息）APP新增（？） | 2d | 2017-02-20 | 2017-02-21 | 139 |  |  | 1.4d | 0d | 高明 | 16h |  |
| 141 | 1.5.60 | 更新客户信息（客户接待信息/需求分析）APP更新 | 2d | 2017-02-22 A | 2017-02-23 | 140 | 80% | 0.4d | 6.5d | 0d | 高明 | 16h | 12.8h |
| 142 | 1.5.61 | 更新客户信息（试乘试驾）APP更新（？） | 2d | 2017-02-24 | 2017-02-27 | 141 |  |  | 1.4d | 0d | 高明 | 16h |  |
| 143 | 1.5.62 | 更新客户信息（置换需求）APP更新 | 2d | 2017-02-28 A | 2017-03-01 | 142 | 80% | 0.4d | 4.9d | 0d | 高明 | 16h | 12.8h |
| 144 | 1.5.63 | 更新客户信息（金融报价）APP更新（X） | 2d | 2017-03-02 | 2017-03-03 | 143 |  |  | 1.4d | 0d | 高明 | 16h |  |
| 145 | 1.5.64 | 更新客户信息（客户培育）APP更新（X） | 2d | 2017-03-06 | 2017-03-07 | 144 |  |  | 1.4d | 0d | 高明 | 16h |  |
| 146 | 1.5.65 | 销售人员分配信息APP更新 | 2d | 2017-03-08 A | 2017-03-09 | 145 | 80% | 0.4d | 4.9d | 0d | 高明 | 16h | 12.8h |
| 147 | 1.5.66 | 每周上报展厅报表（展厅周报）（计划任务 SADMS010） | 1d? | 2016-12-09 | 2016-12-09 |  |  |  | 66d |  |  |  |  |
| 148 | 1.5.67 | 计划任务生成外呼核实结果月报表（计划任务 OUTBOUND_MONTH_REPORT） | 1d? | 2016-12-09 | 2016-12-09 |  |  |  | 66d |  |  |  |  |
| 149 | 1.5.68 | 二手车置换率月报周报（计划任务 SADMS050） | 1d? | 2016-12-09 | 2016-12-09 |  |  |  | 66d |  |  |  |  |
| 150 | 1.5.69 | 留存订单计划上报（计划任务 SADMS063） | 1d? | 2016-12-09 | 2016-12-09 |  |  |  | 66d |  |  |  |  |
| 151 | 1.5.70 | 计划任务上报销售分析报表（销售漏斗）（计划任务 SADMS013） | 1d? | 2016-12-09 | 2016-12-09 |  |  |  | 66d |  |  |  |  |
| 152 | 1.5.71 | 超期未维护客户及订单信息汇总上报（计划任务 SADMS034） | 1d? | 2016-12-09 | 2016-12-09 |  |  |  | 66d |  |  |  |  |
| 153 | 1.6 | **DMS销售APP后台接口** | 65.5d? | 2016-12-09 A | 2017-03-16 |  | 6% | 61.83d? | 1.5d |  |  | 692h | 39.2h |
| 154 | 1.6.1 | ASC登陆(PAD) | 2d | 2017-02-22 | 2017-02-24 | 137 |  |  | 1.5d | 0d | 王亮 | 16h |  |
| 155 | 1.6.2 | PAD获取经销商列表 | 1.5d | 2017-02-24 | 2017-02-27 | 154 |  |  | 1.5d | 0d | 王亮 | 12h |  |
| 156 | 1.6.3 | PAD获取版本号 | 1.5d | 2017-02-28 | 2017-03-01 | 155 |  |  | 1.5d | 0d | 王亮 | 12h |  |
| 157 | 1.6.4 | PAD获取DMS字典 | 1d | 2017-03-01 | 2017-03-02 | 156 |  |  | 1.5d | 0d | 王亮 | 8h |  |
| 158 | 1.6.5 | 查询试乘试驾计划信息 | 1d | 2017-03-02 | 2017-03-03 | 157 |  |  | 1.5d | 0d | 王亮 | 8h |  |
| 159 | 1.6.6 | 查询试乘试驾路线 | 1d | 2017-03-03 | 2017-03-06 | 158 |  |  | 1.5d | 0d | 王亮 | 8h |  |
| 160 | 1.6.7 | 查询日KPI | 2d | 2017-03-06 | 2017-03-08 | 159 |  |  | 1.5d | 0d | 王亮 | 16h |  |
| 161 | 1.6.8 | 查询周KPI | 2d | 2017-03-08 | 2017-03-10 | 160 |  |  | 1.5d | 0d | 王亮 | 16h |  |
| 162 | 1.6.9 | 查询月KPI进度 | 2d | 2017-03-10 | 2017-03-14 | 161 |  |  | 1.5d | 0d | 王亮 | 16h |  |
| 163 | 1.6.10 | 待跟进任务清单 | 2d | 2017-03-14 | 2017-03-16 | 162 |  |  | 1.5d |  | 王亮 | 16h |  |
| 164 | 1.6.11 | 查询试乘试驾问卷 | 2d | 2017-02-10 | 2017-02-13 | 89 |  |  | 2d | 0d | 夏海洋 | 16h |  |
| 165 | 1.6.12 | 查询 所有展厅记录 | 2d | 2017-02-14 | 2017-02-15 | 164 |  |  | 2d | 0d | 夏海洋 | 16h |  |
| 166 | 1.6.13 | 将展厅记录置为无效 | 2d | 2017-02-16 | 2017-02-17 | 165 |  |  | 2d | 0d | 夏海洋 | 16h |  |
| 167 | 1.6.14 | 维护潜在客户所有信息 | 2d | 2017-02-20 | 2017-02-21 | 166 |  |  | 2d | 0d | 夏海洋 | 16h |  |
| 168 | 1.6.15 | PAD查询销售促进活动 | 2d | 2017-02-22 | 2017-02-23 | 167 |  |  | 2d | 0d | 夏海洋 | 16h |  |
| 169 | 1.6.16 | PAD根据手机电话和姓名查询简单客户信息 | 2d | 2017-02-24 | 2017-02-27 | 168 |  |  | 2d | 0d | 夏海洋 | 16h |  |
| 170 | 1.6.17 | PAD根据意向ID查询客户意向明细中的主要车型 | 2d | 2017-02-28 | 2017-03-01 | 169 |  |  | 2d | 0d | 夏海洋 | 16h |  |
| 171 | 1.6.18 | PAD查询精品信息 | 2d | 2017-03-02 | 2017-03-03 | 170 |  |  | 2d | 0d | 夏海洋 | 16h |  |
| 172 | 1.6.19 | PAD查询可以配车的车辆 | 2d | 2017-03-06 | 2017-03-07 | 171 |  |  | 2d | 0d | 夏海洋 | 16h |  |
| 173 | 1.6.20 | PAD增销售订单 | 2d | 2017-03-08 | 2017-03-09 | 172 |  |  | 2d | 0d | 夏海洋 | 16h |  |
| 174 | 1.6.21 | PAD简单订单查询 | 2d | 2017-03-10 | 2017-03-13 | 173 |  |  | 2d | 0d | 夏海洋 | 16h |  |
| 175 | 1.6.22 | PAD明细订单查询 | 2d | 2017-03-14 | 2017-03-15 | 174 |  |  | 2d |  | 夏海洋 | 16h |  |
| 176 | 1.6.23 | PAD根据意向ID查询客户意向明细 | 2d | 2017-01-20 | 2017-01-23 | 52 |  |  | 17d | 0d | 杨杰 | 16h |  |
| 177 | 1.6.24 | PAD查询客户的意向级别状态 | 2d | 2017-01-23 | 2017-01-25 | 176 |  |  | 17d | 0d | 杨杰 | 16h |  |
| 178 | 1.6.25 | 离线保存潜在客户所有信息 | 2d | 2017-01-25 | 2017-02-03 | 177 |  |  | 17d | 0d | 杨杰 | 16h |  |
| 179 | 1.6.26 | PAD维护跟进记录信息 | 2d | 2017-02-03 | 2017-02-06 | 178 |  |  | 17d | 0d | 杨杰 | 16h |  |
| 180 | 1.6.27 | 新增试乘试驾信息信息 | 1.5d | 2017-02-06 | 2017-02-07 | 179 |  |  | 17d | 0d | 杨杰 | 12h |  |
| 181 | 1.6.28 | PAD维护试乘试驾反馈问卷 | 1.5d | 2017-02-08 | 2017-02-09 | 180 |  |  | 17d | 0d | 杨杰 | 12h |  |
| 182 | 1.6.29 | PAD查询车辆主数据 | 2d | 2017-02-09 | 2017-02-13 | 181 |  |  | 17d | 0d | 杨杰 | 16h |  |
| 183 | 1.6.30 | 客户休眠申请 | 1.5d | 2017-02-13 | 2017-02-14 | 182 |  |  | 17d | 0d | 杨杰 | 12h |  |
| 184 | 1.6.31 | PAD查询待交车的订单信息 | 2d | 2017-02-15 | 2017-02-16 | 183 |  |  | 17d | 0d | 杨杰 | 16h |  |
| 185 | 1.6.32 | PAD交车确认、保修登记卡录入 | 2d | 2017-02-17 | 2017-02-20 | 184 |  |  | 17d | 0d | 杨杰 | 16h |  |
| 186 | 1.6.33 | 查询客户保有车辆信息 | 2d | 2017-02-21 | 2017-02-22 | 185 |  |  | 17d |  | 杨杰 | 16h |  |
| 187 | 1.6.34 | PAD获取DMS中的品牌车系车型字典 | 2d | 2017-02-13 | 2017-02-15 | 117 |  |  | 22.5d |  | 李高奇 | 16h |  |
| 188 | 1.6.35 | 新增潜在客户保有车辆 | 2d | 2017-02-23 | 2017-02-27 | 118 |  |  | 4.5d | 0d | 邹凯强 | 16h |  |
| 189 | 1.6.36 | 修改潜在客户保有车辆 | 2d | 2017-02-27 | 2017-03-01 | 188 |  |  | 4.5d | 0d | 邹凯强 | 16h |  |
| 190 | 1.6.37 | 报价单转订单客户保有车辆信息 | 2d | 2017-03-01 | 2017-03-03 | 189 |  |  | 4.5d | 0d | 邹凯强 | 16h |  |
| 191 | 1.6.38 | 销售订单客户保有车辆信息 | 2d | 2017-03-03 | 2017-03-07 | 190 |  |  | 4.5d | 0d | 邹凯强 | 16h |  |
| 192 | 1.6.39 | 销售订单预计交车日期确认 | 2d | 2017-03-07 | 2017-03-09 | 191 |  |  | 4.5d | 0d | 邹凯强 | 16h |  |
| 193 | 1.6.40 | PAD查询贷款利率金融方案 | 2d | 2017-03-09 | 2017-03-13 | 192 |  |  | 4.5d |  | 邹凯强 | 16h |  |
| 194 | 1.6.41 | 查询未上报销售批售单信息 | 2d | 2017-02-22 | 2017-02-24 | 137 |  |  | 11.5d | 0d | 李高奇 | 16h |  |
| 195 | 1.6.42 | 保存销售批售单信息 | 2d | 2017-02-24 | 2017-02-28 | 194 |  |  | 11.5d | 0d | 李高奇 | 16h |  |
| 196 | 1.6.43 | 查询出市场活动主数据传递给PAD | 2d | 2017-02-28 | 2017-03-02 | 195 |  |  | 11.5d |  | 李高奇 | 16h |  |
| 199 | 1.6.44 | DMS用户映射 | 1d? | 2016-12-09 | 2016-12-09 |  |  |  | 66d |  |  |  |  |
| 201 | 1.6.45 | 试乘试驾潜客信息修改 | 1d? | 2016-12-09 A | 2016-12-09 |  | 85% | 0.15d? | 66d |  | 王鑫 | 8h | 6.8h |
| 202 | 1.6.46 | 试乘试驾客户跟进修改 | 1d? | 2016-12-09 A | 2016-12-09 |  | 85% | 0.15d? | 66d |  | 王鑫 | 8h | 6.8h |
| 203 | 1.6.47 | 试乘试驾登记反馈 | 1d? | 2016-12-09 A | 2016-12-09 |  | 65% | 0.35d? | 66d |  | 王鑫 | 8h | 5.2h |
| 204 | 1.6.48 | 试乘试驾明细 | 1d? | 2016-12-09 A | 2016-12-09 |  | 85% | 0.15d? | 66d |  | 王鑫 | 8h | 6.8h |
| 205 | 1.6.49 | 试乘试驾明细信息上报接口 | 1d? | 2016-12-09 A | 2016-12-09 |  | 85% | 0.15d? | 66d |  | 王鑫 | 8h | 6.8h |
| 206 | 1.6.50 | 试乘试驾统计表上报接口 | 1d? | 2016-12-09 A | 2016-12-09 |  | 85% | 0.15d? | 66d |  | 王鑫 | 8h | 6.8h |
