# 广菲克DMS CLOUD项目计划

Schedule from MS Project, 2016-11-14 to 2017-07-06, A marks actual dates.

## Calendars

- 标准: Mon-Fri 08:00-12:00, 13:00-17:00; Sat-Sun off. Exceptions (off unless hours are given): 2017-04-01 08:00-12:00, 13:00-17:00, 2017-04-03 to 2017-04-04, 2017-05-01, 2017-05-27 08:00-12:00, 13:00-17:00, 2017-05-29 to 2017-05-30.

## Resources

| Resource |
| --- |
| TBD |
| TBD1 |
| TBD2 |
| TBD3 |
| TBD4 |
| TBD5 |
| TBD6 |
| TBD7 |
| TBD8 |
| TBD9 |
| TBD10 |
| TBD11 |
| TBD12 |
| TBD13 |
| TBD14 |
| TBD15 |
| TBD16 |
| TBD17 |
| 郑聪 |
| 丁长宇 |
| 丁超宇 |
| 孙庆华 |
| 陈伟 |
| 朱恒龙 |
| 杨杰 |
| 邹凯强 |
| （郑聪+朱恒龙+杨杰） |
| 余江恒 |
| 詹市伟 |
| 詹市伟2 |
| 陈永 |
| 詹市伟3 |
| 詹市伟4 |
| 潘春雷 |
| 孙国伟 |
| 李春阳 |
| 司朋 |
| 万涛 |
| 王鑫 |
| 司鹏 |

## Schedule

| ID | WBS | Task | Duration | Start | Finish | Predecessors | Complete | Remaining | Total slack | Constraint | Resources | Work | Actual work | Text1 |
| --- | --- | --- | --- | --- | --- | --- | --- | --- | --- | --- | --- | --- | --- | --- |
| 1 | WBS-4 | **开发** | 166d? | 2016-11-14 A | 2017-07-06 |  | 31% | 115.23d? | 0d |  |  | 6334h | 1921.12h |  |
| 2 | WBS-4.1 | **功能开发** | 166d? | 2016-11-14 A | 2017-07-06 |  | 31% | 115.23d? | 0d |  |  | 6334h | 1921.12h |  |
| 3 | WBS-4.1.2 | **DMS售后模块** | 166d? | 2016-11-14 A | 2017-07-06 |  | 31% | 115.23d? | 0d |  |  | 6334h | 1921.12h |  |
| 4 | WBS-4.1.2.1 | **系统管理** | 43d | 2017-03-20 A | 2017-05-19 |  | 85% | 6.4d | 33d |  |  | 376h | 320h | 45.5 |
| 5 | WBS-4.1.2.1.4 | 工种定义 | 1d | 2017-03-20 A | 2017-03-20 A |  | 100% |  |  |  | 丁超宇 | 8h | 8h |  |
| 6 | WBS-4.1.2.1.5 | 班组定义 | 1d | 2017-03-21 A | 2017-03-21 A |  | 100% |  |  | must start on 2017-03-21 | 孙庆华 | 8h | 8h |  |
| 7 | WBS-4.1.2.1.59 | 仓库定义 | 1.5d | 2017-03-20 A | 2017-03-21 A |  | 100% |  |  |  | 郑聪 | 12h | 12h |  |
| 8 | WBS-4.1.2.1.58 | 配件车型组定义 | 1d | 2017-03-22 A | 2017-03-22 A |  | 100% |  |  |  | 陈伟 | 8h | 8h |  |
| 9 | WBS-4.1.2.1.56 | 计量单位 | 3d | 2017-03-31 A | 2017-04-05 A |  | 100% |  |  | finish no earlier than 2017-04-01 | 余江恒 | 24h | 24h |  |
| 10 | WBS-4.1.2.1.55 | 会计周期 | 2d | 2017-04-06 A | 2017-04-07 A | 9 | 100% |  |  | finish no earlier than 2017-04-07 | 余江恒 | 16h | 16h |  |
| 11 | WBS-4.1.2.1.54 | 业务往来客户类型 | 1d | 2017-03-22 A | 2017-03-22 A | 7 | 100% |  |  |  | 郑聪 | 8h | 8h |  |
| 12 | WBS-4.1.2.1.53 | 订货公式定义 | 1d | 2017-03-22 A | 2017-03-22 A |  | 100% |  |  |  | 杨杰 | 8h | 8h |  |
| 13 | WBS-4.1.2.1.50 | 附加项目 | 1d | 2017-03-21 A | 2017-03-21 A | 5 | 100% |  |  |  | 丁超宇 | 8h | 8h |  |
| 14 | WBS-4.1.2.1.49 | 优惠模式 | 1d | 2017-03-23 A | 2017-03-23 A | 11 | 100% |  |  |  | 郑聪 | 8h | 8h |  |
| 15 | WBS-4.1.2.1.48 | 收费区分 | 1d | 2017-03-22 A | 2017-03-22 A | 13 | 100% |  |  |  | 丁超宇 | 8h | 8h |  |
| 16 | WBS-4.1.2.1.47 | 收费类别 | 2d | 2017-03-24 A | 2017-03-27 A | 14 | 100% |  |  |  | 郑聪 | 16h | 16h |  |
| 17 | WBS-4.1.2.1.46 | 其他成本 | 1d | 2017-04-10 A | 2017-04-10 A | 10 | 100% |  |  |  | 余江恒 | 8h | 8h |  |
| 18 | WBS-4.1.2.1.45 | 预约类别 | 1d | 2017-03-22 A | 2017-03-22 A |  | 100% |  |  |  | 邹凯强 | 8h | 8h |  |
| 19 | WBS-4.1.2.1.44 | 预约限量 | 1d | 2017-03-22 A | 2017-03-22 A | 6 | 100% |  |  |  | 孙庆华 | 8h | 8h |  |
| 20 | WBS-4.1.2.1.43 | 工时单价 | 1d | 2017-03-28 A | 2017-03-28 A | 16 | 100% |  |  |  | 郑聪 | 8h | 8h |  |
| 21 | WBS-4.1.2.1.42 | 借进归还 | 1d | 2017-03-22 A | 2017-03-22 A |  | 100% |  |  |  | 朱恒龙 | 8h | 8h |  |
| 22 | WBS-4.1.2.1.41 | 组合类别 | 1d | 2017-03-23 A | 2017-03-23 A | 19 | 100% |  |  |  | 孙庆华 | 8h | 8h |  |
| 23 | WBS-4.1.2.1.40 | 维修工位 | 1d | 2017-03-23 A | 2017-03-23 A | 8 | 100% |  |  |  | 陈伟 | 8h | 8h |  |
| 24 | WBS-4.1.2.1.39 | 故障描述 | 1d | 2017-03-24 A | 2017-03-24 A | 23 | 100% |  |  |  | 陈伟 | 8h | 8h |  |
| 25 | WBS-4.1.2.1.38 | 保险公司 | 2d | 2017-03-23 A | 2017-03-24 A | 21 | 100% |  |  |  | 朱恒龙 | 16h | 16h |  |
| 26 | WBS-4.1.2.1.37 | 险种定义 | 1.5d | 2017-03-24 A | 2017-03-27 A | 22 | 100% |  |  |  | 孙庆华 | 12h | 12h |  |
| 27 | WBS-4.1.2.1.36 | 车型修理项目分组代码 | 1d | 2017-03-27 A | 2017-03-27 A | 25 | 100% |  |  |  | 朱恒龙 | 8h | 8h |  |
| 28 | WBS-4.1.2.1.33 | 维修项目分类 | 2d | 2017-03-23 A | 2017-03-24 A | 15 | 100% |  |  |  | 丁超宇 | 16h | 16h |  |
| 29 | WBS-4.1.2.1.32 | 装潢项目类型 | 2d | 2017-04-11 A | 2017-04-12 A | 17 | 100% |  |  |  | 余江恒 | 16h | 16h |  |
| 30 | WBS-4.1.2.1.31 | 限价车系及维修类型 | 1d | 2017-03-27 A | 2017-03-27 A | 24 | 100% |  |  |  | 陈伟 | 8h | 8h |  |
| 31 | WBS-4.1.2.1.27 | 用户映射 | 3d | 2017-05-12 A | 2017-05-16 |  |  | 3d | 29d |  | 陈永 | 24h |  |  |
| 32 | WBS-4.1.2.1.26 | 基本参数设置 | 3d | 2017-03-23 A | 2017-03-27 A | 12 | 100% |  |  |  | 杨杰 | 24h | 24h |  |
| 33 | WBS-4.1.2.1.24 | 用户提醒映射配置 | 3d | 2017-03-22 A | 2017-03-24 |  |  | 3d | 71d |  | 陈永 | 24h |  |  |
| 34 | WBS-4.1.2.1.1 | 工具类别 | 1d | 2017-04-13 A | 2017-04-13 A | 29 | 100% |  |  | start no earlier than 2017-03-30 | 余江恒 | 8h | 8h |  |
| 35 | WBS-4.1.2.1.60 | 操作日志 | 2d | 2017-05-18 A | 2017-05-19 A | 145 | 100% |  |  | start no earlier than 2016-12-21 | 余江恒 | 16h | 16h |  |
| 36 | WBS-4.1.2.1.61 | 技师考勤登记 | 1d | 2017-05-19 A | 2017-05-19 |  |  | 1d | 26d | start no earlier than 2016-12-15 | 余江恒 | 8h |  |  |

| ID | WBS | Task | Duration | Start | Finish | Predecessors | Complete | Remaining | Total slack | Free slack | Constraint | Resources | Work | Actual work | Text1 |
| --- | --- | --- | --- | --- | --- | --- | --- | --- | --- | --- | --- | --- | --- | --- | --- |
| 37 | WBS-4.1.2.2 | **客户管理** | 59.5d | 2017-03-23 A | 2017-06-19 |  | 55% | 26.48d | 13.5d |  |  |  | 804h | 455h | 35.5，104 |
| 38 | WBS-4.1.2.2.1 | 车主车辆管理 | 4d | 2017-05-10 A | 2017-05-16 A | 133 | 100% |  |  |  |  | 丁超宇 | 32h | 32h |  |
| 39 | WBS-4.1.2.2.4 | 专属客户经理绑定 | 2d | 2017-03-29 A | 2017-03-30 A | 20 | 100% |  |  |  |  | 郑聪 | 16h | 16h |  |
| 40 | WBS-4.1.2.2.5 | 微信平台车主信息回传 | 2d | 2017-03-23 A | 2017-03-24 A | 18 | 100% |  |  |  |  | 邹凯强 | 16h | 16h |  |
| 41 | WBS-4.1.2.2.6 | 微信平台客户经理绑定修改 | 2d | 2017-03-27 A | 2017-03-28 A | 40 | 100% |  |  |  |  | 邹凯强 | 16h | 16h |  |
| 42 | WBS-4.1.2.2.7 | 客户预约安排 | 5d | 2017-03-28 A | 2017-04-01 | 27 | 80% | 1d | 41.9d | 0d |  | 朱恒龙 | 40h | 32h |  |
| 43 | WBS-4.1.2.2.8 | 预约状况查询 | 3d | 2017-04-05 A | 2017-04-07 | 42 | 20% | 2.4d | 41.3d | 0d |  | 朱恒龙 | 24h | 4.8h |  |
| 44 | WBS-4.1.2.2.9 | 预约汇总表 | 2.5d | 2017-04-10 A | 2017-04-12 | 43 | 20% | 2d | 40.8d | 0d |  | 朱恒龙 | 20h | 4h |  |
| 45 | WBS-4.1.2.2.10 | 车主微信预约管理 | 2d | 2017-03-28 A | 2017-03-29 A | 32 | 100% |  |  |  |  | 杨杰 | 16h | 16h |  |
| 46 | WBS-4.1.2.2.13 | 定期保养提醒 | 3.5d | 2017-03-29 A | 2017-04-01 | 41 | 88% | 0.42d | 59.91d | 0d |  | 邹凯强 | 28h | 24.64h |  |
| 47 | WBS-4.1.2.2.14 | 保险到期提醒 | 3.5d | 2017-04-01 A | 2017-04-07 | 46 | 85% | 0.53d | 56.94d | 0d |  | 邹凯强 | 28h | 23.8h |  |
| 48 | WBS-4.1.2.2.33 | 保修到期提醒 | 3.5d | 2017-04-10 A | 2017-04-13 | 47 | 85% | 0.53d | 53.96d | 0d |  | 邹凯强 | 28h | 23.8h |  |
| 49 | WBS-4.1.2.2.46 | 业务往来客户 | 2.5d | 2017-03-28 A | 2017-03-30 A | 30 | 100% |  |  |  |  | 陈伟 | 20h | 20h |  |
| 50 | WBS-4.1.2.2.45 | 监控信息设定 | 2.5d | 2017-04-13 A | 2017-04-17 | 48 | 25% | 1.88d | 53.34d | 0d |  | 邹凯强 | 20h | 5h |  |
| 51 | WBS-4.1.2.2.1 | 车辆过户 | 2.5d | 2017-03-31 A | 2017-04-05 A | 26 | 100% |  |  |  | start no earlier than 2017-03-31 | 孙庆华 | 20h | 20h |  |
| 52 | WBS-4.1.2.2.56 | 车牌号更改与合并 | 2.5d | 2017-05-24 A | 2017-05-26 | 54 | 20% | 2d | 28.5d |  | start no earlier than 2017-04-05 | 孙庆华 | 20h | 4h |  |
| 53 | WBS-4.1.2.2.57 | 验车到期提醒 | 4d | 2017-05-12 A | 2017-05-18 | 74 | 20% | 3.2d | 29d | 0d | start no earlier than 2017-03-20 | 孙庆华 | 32h | 6.4h |  |
| 54 | WBS-4.1.2.2.58 | 新车提醒 | 3.5d | 2017-05-18 | 2017-05-23 | 53 |  |  | 29d | 0d | start no earlier than 2017-03-24 | 孙庆华 | 28h |  |  |
| 55 | WBS-4.1.2.2.59 | 车主生日函 | 3.5d | 2017-06-06 | 2017-06-09 | 170 |  |  | 13.5d | 0d | start no earlier than 2017-03-29 | TBD6 | 28h |  |  |
| 56 | WBS-4.1.2.2.60 | 维修建议查询 | 2d | 2017-04-25 A | 2017-04-26 | 108 | 98% | 0.04d | 49d |  | start no earlier than 2017-04-01 | 邹凯强 | 16h | 15.68h |  |
| 57 | WBS-4.1.2.2.61 | 客户生日提醒 | 2.5d | 2017-06-12 | 2017-06-14 | 55 |  |  | 13.5d | 0d | start no earlier than 2017-04-10 | TBD6 | 20h |  |  |
| 58 | WBS-4.1.2.2.62 | 客户投诉接待 | 3d | 2017-04-27 A | 2017-05-02 A | 56 | 100% |  |  |  | start no earlier than 2017-04-20 | 邹凯强 | 24h | 24h |  |
| 59 | WBS-4.1.2.2.63 | 客户投诉查询 | 2.5d | 2017-05-03 A | 2017-05-05 A | 58 | 100% |  |  |  | start no earlier than 2017-04-21 | 邹凯强 | 20h | 20h |  |
| 60 | WBS-4.1.2.2.64 | 客户投诉处理及分析 | 2.5d | 2017-05-05 A | 2017-05-09 | 59 | 98% | 0.05d | 17.91d | 0d | start no earlier than 2017-04-24 | 邹凯强 | 20h | 19.6h |  |
| 61 | WBS-4.1.2.2.65 | 客户投诉结案 | 2.5d | 2017-05-10 A | 2017-05-12 | 60 | 98% | 0.05d | 15.46d | 0d | start no earlier than 2017-04-25 | 邹凯强 | 20h | 19.6h |  |
| 62 | WBS-4.1.2.2.66 | 客户投诉处理情况 | 2d | 2017-05-12 A | 2017-05-16 | 61 | 98% | 0.04d | 13.5d | 0d | start no earlier than 2017-04-26 | 邹凯强 | 16h | 15.68h |  |
| 63 | WBS-4.1.2.2.67 | 分配回访任务 | 3.5d | 2017-05-05 | 2017-05-10 | 153 |  |  | 29.5d | 0d | start no earlier than 2017-05-02 | 万涛 | 28h |  |  |
| 64 | WBS-4.1.2.2.68 | 录入回访结果 | 4d | 2017-05-10 | 2017-05-16 | 63 |  |  | 29.5d | 0d | start no earlier than 2017-03-20 | 万涛 | 32h |  |  |
| 65 | WBS-4.1.2.2.69 | 回访结果查询 | 3d | 2017-05-16 | 2017-05-19 | 64 |  |  | 29.5d | 0d | start no earlier than 2017-03-24 | 万涛 | 24h |  |  |
| 66 | WBS-4.1.2.2.70 | 回访结果汇总报表 | 4d | 2017-05-19 | 2017-05-25 | 65 |  |  | 29.5d |  | start no earlier than 2017-03-29 | 万涛 | 32h |  |  |
| 67 | WBS-4.1.2.2.71 | 客户流失报警 | 4d | 2017-04-05 A | 2017-04-11 | 51 | 80% | 0.8d | 44.33d | 0d | start no earlier than 2017-04-05 | 孙庆华 | 32h | 25.6h |  |
| 68 | WBS-4.1.2.2.72 | 流失报警录入回访 | 4d | 2017-04-11 A | 2017-04-17 | 67 | 80% | 0.8d | 41.12d | 0d | start no earlier than 2017-04-11 | 孙庆华 | 32h | 25.6h |  |
| 69 | WBS-4.1.2.2.73 | 流失报警回访结果查询 | 3d | 2017-04-17 A | 2017-04-20 | 68 | 80% | 0.6d | 38.73d | 0d | start no earlier than 2017-04-17 | 孙庆华 | 24h | 19.2h |  |
| 70 | WBS-4.1.2.2.74 | 问卷制作 | 1d | 2017-05-17 A | 2017-05-18 | 92 | 70% | 0.3d | 34.5d |  | start no earlier than 2017-04-24 | 朱恒龙 | 8h | 5.6h |  |
| 71 | WBS-4.1.2.2.75 | 客户消费排行 | 3d | 2017-06-14 | 2017-06-19 | 57 |  |  | 13.5d |  | start no earlier than 2017-04-25 | TBD6 | 24h |  |  |
| 72 | WBS-4.1.2.2.76 | 面访录入 | 2d | 2017-04-18 | 2017-04-19 |  |  |  | 54d |  | start no earlier than 2017-04-18 |  |  |  |  |

| ID | WBS | Task | Duration | Start | Finish | Predecessors | Complete | Remaining | Total slack | Free slack | Constraint | Resources | Work | Actual work | Text1 |
| --- | --- | --- | --- | --- | --- | --- | --- | --- | --- | --- | --- | --- | --- | --- | --- |
| 73 | WBS-4.1.2.48 | **衍生业务** | 15d | 2017-04-20 A | 2017-05-12 |  | 33% | 10.08d | 29.8d |  |  |  | 64h | 21h |  |
| 74 | WBS-4.1.2.48.1 | 装潢套餐管理 | 2.5d | 2017-05-10 | 2017-05-12 | 76 |  |  | 29.8d | 0d | start no earlier than 2017-04-14 | 孙庆华 | 20h |  |  |
| 75 | WBS-4.1.2.48.2 | 保险投保单 | 3.5d | 2017-04-20 A | 2017-04-25 | 69 | 75% | 0.88d | 36.1d | 0d | start no earlier than 2017-04-18 | 孙庆华 | 28h | 21h |  |
| 76 | WBS-4.1.2.48.3 | 保险营销活动 | 2d | 2017-05-08 | 2017-05-09 | 81 |  |  | 29.8d | 0d | start no earlier than 2017-04-21 | 孙庆华 | 16h |  |  |
| 77 | WBS-4.1.2.52 | **维修管理** | 24d | 2017-04-12 A | 2017-05-17 |  | 36% | 15.43d | 35.5d |  |  | 郑聪 | 752h | 227.84h | 67 |
| 78 | WBS-4.1.2.52.1 | 客户接待 | 7d | 2017-04-12 A | 2017-04-21 | 115 | 72% | 1.96d | 48.5d | 0d |  | 郑聪 | 56h | 40.32h |  |
| 79 | WBS-4.1.2.52.1 | 客户接待 | 7d | 2017-04-12 A | 2017-04-21 | 44 | 80% | 1.4d | 35.2d | 0d |  | 朱恒龙 | 56h | 44.8h |  |
| 80 | WBS-4.1.2.52.14 | 客户接待 | 7d | 2017-04-17 A | 2017-04-25 | 121 | 78% | 1.54d | 36.88d | 0d |  | 杨杰 | 56h | 43.68h |  |
| 81 | 1.1.1.4.4 | 客户接待 | 7d | 2017-04-26 A | 2017-05-05 | 75 | 90% | 0.7d | 29.8d | 0d | start no earlier than 2017-04-17 | 孙庆华 | 56h | 50.4h |  |
| 82 | WBS-4.1.2.52.2 | 提交结算 | 4d | 2017-04-21 | 2017-04-27 | 78 |  |  | 48.5d |  |  | 郑聪 | 32h |  |  |
| 83 | WBS-4.1.2.52.3 | 修理估价 | 6d | 2017-04-21 | 2017-05-02 | 79 |  |  | 35.2d | 0d | start no earlier than 2017-04-21 | 朱恒龙 | 48h |  |  |
| 84 | WBS-4.1.2.52.4 | 维修业务查询 | 3d | 2017-04-26 | 2017-04-28 | 80 |  |  | 36.88d | 0d |  | 杨杰 | 24h |  |  |
| 85 | WBS-4.1.2.52.5 | 维修组合管理 | 4d | 2017-05-02 | 2017-05-05 | 84 |  |  | 36.88d | 0d |  | 杨杰 | 32h |  |  |
| 86 | WBS-4.1.2.52.6 | 维修项目管理 | 5d | 2017-05-08 | 2017-05-12 | 85 |  |  | 36.88d | 0d |  | 杨杰 | 40h |  |  |
| 87 | WBS-4.1.2.52.7 | 保养套餐管理 | 2d | 2017-04-27 A | 2017-05-02 A | 82 | 100% |  |  |  |  | 郑聪 | 16h | 16h |  |
| 88 | WBS-4.1.2.52.8 | 交车 | 5d | 2017-05-02 | 2017-05-09 | 87 |  |  | 34.1d | 0d |  | 郑聪 | 40h |  |  |
| 89 | WBS-4.1.2.52.10 | 未结算索赔工单查询 | 2d | 2017-05-09 A | 2017-05-11 | 88 | 30% | 1.4d | 33.5d | 0d |  | 孙庆华 | 16h | 4.8h |  |
| 90 | WBS-4.1.2.52.11 | 车间维修派工 | 6d | 2017-05-02 | 2017-05-10 | 83 |  |  | 35.2d | 0d |  | 朱恒龙 | 48h |  |  |
| 91 | WBS-4.1.2.52.12 | 车间工时调整 | 3d | 2017-05-10 | 2017-05-15 | 90 |  |  | 35.2d | 0d |  | 朱恒龙 | 24h |  |  |
| 92 | WBS-4.1.2.52.13 | 车间消息日志 | 2d | 2017-05-15 | 2017-05-17 | 91 |  |  | 35.2d | 0d |  | 朱恒龙 | 16h |  |  |
| 93 | WBS-4.1.2.66 | **配件管理** | 40.5d | 2017-03-27 A | 2017-05-24 |  | 64% | 14.69d | 30.5d |  |  |  | 1108h | 706h | A119，（A+B）141 |
| 94 | WBS-4.1.2.66.1 | 呆滞品数据上报 | 2d | 2017-05-17 A | 2017-05-18 A | 38 | 100% |  |  |  | finish no earlier than 2017-05-18 | 丁超宇 | 16h | 16h |  |
| 95 | WBS-4.1.2.66.2 | 已发布呆滞品查询 | 1d | 2017-05-19 A | 2017-05-19 A | 94 | 100% |  |  |  | finish no earlier than 2017-04-27 | 丁超宇 | 8h | 8h |  |
| 96 | 1.1.1.5.3 | 配件信息管理 | 3.5d | 2017-03-27 A | 2017-03-30 A | 28 | 100% |  |  |  |  | 丁超宇 | 28h | 28h |  |
| 97 | WBS-4.1.2.66.18 | 配件库存管理 | 4d | 2017-03-30 A | 2017-04-06 A | 96 | 100% |  |  |  |  | 丁超宇 | 32h | 32h |  |
| 98 | WBS-4.1.2.66.19 | 配件价格调整 | 2.5d | 2017-04-06 A | 2017-04-10 A | 97 | 100% |  |  |  |  | 丁超宇 | 20h | 20h |  |
| 99 | WBS-4.1.2.66.20 | 配件成本价调整 | 2d | 2017-04-11 A | 2017-04-12 A | 98 | 100% |  |  |  |  | 丁超宇 | 16h | 16h |  |
| 100 | WBS-4.1.2.66.21 | 配件ABCD分析 | 2d | 2017-04-13 A | 2017-04-14 A | 99 | 100% |  |  |  |  | 丁超宇 | 16h | 16h |  |
| 101 | WBS-4.1.2.66.22 | 维修领料 | 3.5d | 2017-03-30 A | 2017-04-05 A | 49 | 100% |  |  |  |  | 陈伟 | 28h | 28h |  |
| 102 | WBS-4.1.2.66.23 | 配件销售报价 | 3.5d | 2017-04-06 A | 2017-04-11 | 101 | 95% | 0.17d | 43.8d | 0d |  | 陈伟 | 28h | 26.6h |  |
| 103 | WBS-4.1.2.66.24 | 配件销售 | 4.5d | 2017-04-11 A | 2017-04-17 | 102 | 40% | 2.7d | 42d | 0d |  | 陈伟 | 36h | 14.4h |  |
| 104 | WBS-4.1.2.66.25 | 车间借料 | 4d | 2017-04-25 A | 2017-04-28 A | 156 | 100% |  |  |  |  | 丁超宇 | 32h | 32h |  |
| 105 | WBS-4.1.2.66.26 | 内部领用 | 3d | 2017-04-18 | 2017-04-20 | 103 |  |  | 42d | 0d |  | 陈伟 | 24h |  |  |
| 106 | WBS-4.1.2.66.27 | 调拨出库 | 3d | 2017-04-21 | 2017-04-25 | 105 |  |  | 42d | 0d |  | 陈伟 | 24h |  |  |
| 107 | WBS-4.1.2.66.28 | 借出登记 | 2.5d | 2017-04-18 A | 2017-04-20 | 50 | 95% | 0.12d | 50.96d | 0d |  | 邹凯强 | 20h | 19h |  |
| 108 | WBS-4.1.2.66.29 | 借进归还 | 2.5d | 2017-04-20 | 2017-04-24 | 107 |  |  | 50.96d | 0d |  | 邹凯强 | 20h |  |  |
| 109 | WBS-4.1.2.66.30 | 配件移库 | 2.5d | 2017-04-27 A | 2017-05-02 A | 243 | 100% |  |  |  | start no earlier than 2017-04-27 | 司朋 | 20h | 20h |  |
| 110 | WBS-4.1.2.66.31 | 配件报损 | 2.5d | 2017-05-02 A | 2017-05-04 | 109 | 35% | 1.62d | 44d |  |  | 司朋 | 20h | 7h |  |
| 111 | WBS-4.1.2.66.32 | 配件预留 | 2.5d | 2017-04-17 A | 2017-04-19 A | 100 | 100% |  |  |  |  | 丁超宇 | 20h | 20h |  |
| 112 | WBS-4.1.2.66.33 | 配件解预留 | 2d | 2017-04-19 A | 2017-04-21 A | 111 | 100% |  |  |  |  | 丁超宇 | 16h | 16h |  |
| 113 | WBS-4.1.2.66.34 | 装饰装潢领料 | 2.5d | 2017-04-21 A | 2017-04-25 | 112 | 40% | 1.5d | 50d |  |  | 丁超宇 | 20h | 8h |  |
| 114 | WBS-4.1.2.66.35 | 签收货运单 | 3d | 2017-03-31 A | 2017-04-05 | 39 | 90% | 0.3d | 56.47d | 0d |  | 郑聪 | 24h | 21.6h |  |
| 115 | 1.1.1.5.22 | 采购入库 | 4.5d | 2017-04-06 A | 2017-04-12 | 114 | 65% | 1.57d | 53.54d | 0d |  | 郑聪 | 36h | 23.4h |  |
| 116 | WBS-4.1.2.66.37 | 调拨入库 | 3d | 2017-04-25 A | 2017-04-27 | 138 | 75% | 0.75d | 30.75d | 0d | finish no earlier than 2017-04-27 | 余江恒 | 24h | 18h |  |
| 117 | WBS-4.1.2.66.38 | 借进登记 | 2.5d | 2017-05-15 A | 2017-05-17 A | 86 | 100% |  |  |  |  | 余江恒 | 20h | 20h |  |
| 118 | WBS-4.1.2.66.39 | 借出归还 | 2d | 2017-03-30 A | 2017-03-31 A | 45 | 100% |  |  |  |  | 杨杰 | 16h | 16h |  |
| 119 | WBS-4.1.2.66.40 | 配件报溢 | 2.5d | 2017-04-01 A | 2017-04-06 A | 118 | 100% |  |  |  |  | 杨杰 | 20h | 20h |  |
| 120 | WBS-4.1.2.66.41 | 盘点清单编辑 | 3.5d | 2017-04-06 A | 2017-04-11 | 119 | 90% | 0.35d | 43.84d | 0d |  | 杨杰 | 28h | 25.2h |  |
| 121 | WBS-4.1.2.66.42 | 盘点差异分析 | 3d | 2017-04-12 A | 2017-04-18 | 120 | 50% | 1.5d | 40.84d | 0d |  | 余江恒 | 24h | 12h |  |
| 122 | WBS-4.1.2.66.43 | 配件订货参数 | 1.5d | 2017-04-10 A | 2017-04-11 A |  | 100% |  |  |  | start no earlier than 2017-04-10 | 詹市伟 | 12h | 12h |  |
| 123 | WBS-4.1.2.66.44 | 配件订货计划 | 5d | 2017-04-11 A | 2017-04-18 | 122 | 90% | 0.5d | 55.2d | 0d |  | 詹市伟 | 40h | 36h |  |
| 124 | WBS-4.1.2.66.45 | 配件订货上报 | 3d | 2017-04-18 A | 2017-04-21 | 123 | 90% | 0.3d | 52.5d |  |  | 詹市伟 | 24h | 21.6h |  |
| 125 | WBS-4.1.2.66.46 | 配件订单状态查询 | 2d | 2017-04-21 A | 2017-04-25 A | 124 | 100% |  |  |  |  | 詹市伟 | 16h | 16h |  |
| 126 | WBS-4.1.2.66.47 | 订单状态跟踪查询 | 2d | 2017-04-25 A | 2017-04-27 | 125 | 20% | 1.6d | 48.5d |  |  | 詹市伟 | 16h | 3.2h |  |
| 127 | WBS-4.1.2.66.56 | 发料价格调整 | 2.5d | 2017-04-27 A | 2017-05-02 A | 126 | 100% |  |  |  |  | 詹市伟 | 20h | 20h |  |
| 128 | WBS-4.1.2.66.57 | 配件流水帐 | 2.5d | 2017-05-03 | 2017-05-05 | 127 |  |  | 37.5d | 0d |  | 詹市伟 | 20h |  |  |
| 129 | WBS-4.1.2.66.58 | 配件缺料明细表 | 2.5d | 2017-04-26 A | 2017-04-28 A | 113 | 100% |  |  |  |  | 丁超宇 | 20h | 20h |  |
| 130 | WBS-4.1.2.66.59 | 预约预留情况 | 2d | 2017-04-28 A | 2017-05-03 A | 129 | 100% |  |  |  |  | 丁超宇 | 16h | 16h |  |
| 131 | WBS-4.1.2.66.60 | 预先拣料查询 | 2d | 2017-05-03 A | 2017-05-05 A | 130 | 100% |  |  |  |  | 丁超宇 | 16h | 16h |  |
| 132 | WBS-4.1.2.66.61 | 三包预警缺料明细查询 | 2d | 2017-05-05 | 2017-05-09 | 128 |  |  | 37.5d | 0d |  | 詹市伟 | 16h |  |  |
| 133 | WBS-4.1.2.66.62 | 应付帐款管理 | 3d | 2017-05-05 A | 2017-05-10 A | 131 | 100% |  |  |  |  | 丁超宇 | 24h | 24h |  |
| 134 | WBS-4.1.2.66.63 | 货运签收单查询 | 2.5d | 2017-04-28 A | 2017-05-03 | 116 | 10% | 2.25d | 30.5d | 0d |  | 余江恒 | 20h | 2h |  |
| 135 | WBS-4.1.2.66.64 | 到货索赔管理 | 4d | 2017-05-09 | 2017-05-15 | 132 |  |  | 37.5d |  |  | 詹市伟 | 32h |  |  |
| 136 | WBS-4.1.2.66.1 | 工具定义 | 2d | 2017-04-14 A | 2017-04-17 A | 34 | 100% |  |  |  | start no earlier than 2017-03-23 | 余江恒 | 16h | 16h |  |
| 137 | WBS-4.1.2.66.65 | 采购入库 | 2.5d | 2017-04-18 A | 2017-04-20 A | 136 | 100% |  |  |  | start no earlier than 2017-03-24 | 余江恒 | 20h | 20h |  |
| 138 | WBS-4.1.2.66.66 | 借用登记 | 3d | 2017-04-20 | 2017-04-25 | 137 |  |  | 32.5d | 0d | start no earlier than 2017-03-27 | 余江恒 | 24h |  |  |
| 139 | WBS-4.1.2.66.67 | 借用归还 | 2d | 2017-05-03 | 2017-05-05 | 134 |  |  | 30.5d | 0d | start no earlier than 2017-03-27 | 余江恒 | 16h |  |  |
| 140 | WBS-4.1.2.66.68 | 借用报失 | 2d | 2017-05-05 | 2017-05-09 | 139 |  |  | 30.5d | 0d | start no earlier than 2017-03-28 | 余江恒 | 16h |  |  |
| 141 | WBS-4.1.2.66.69 | 库存报废 | 2.5d | 2017-05-09 | 2017-05-11 | 140 |  |  | 30.5d | 0d | start no earlier than 2017-03-28 | 余江恒 | 20h |  |  |
| 142 | WBS-4.1.2.66.70 | 工具流水帐 | 2.5d | 2017-05-12 | 2017-05-16 | 141 |  |  | 30.5d | 0d | start no earlier than 2017-03-29 | 余江恒 | 20h |  |  |

| ID | WBS | Task | Duration | Start | Finish | Predecessors | Complete | Remaining | Total slack | Free slack | Constraint | Resources | Work | Actual work |
| --- | --- | --- | --- | --- | --- | --- | --- | --- | --- | --- | --- | --- | --- | --- |
| 143 | WBS-4.1.2.66.71 | 单据查询 | 2d | 2017-05-16 | 2017-05-18 | 142 |  |  | 30.5d | 0d | start no earlier than 2017-03-30 | 余江恒 | 16h |  |
| 144 | WBS-4.1.2.66.72 | 工具进销存统计 | 2d | 2017-05-18 | 2017-05-22 | 143 |  |  | 30.5d | 0d | start no earlier than 2017-03-31 | 余江恒 | 16h |  |
| 145 | WBS-4.1.2.66.73 | 借用情况统计 | 2d | 2017-05-22 | 2017-05-24 | 144 |  |  | 30.5d |  | start no earlier than 2017-04-01 | 余江恒 | 16h |  |
| 146 | WBS-4.1.2.140 | **结算管理** | 24d | 2017-04-17 A | 2017-05-19 |  | 36% | 15.42d | 33d |  |  |  | 184h | 62.4h |
| 147 | WBS-4.1.2.140.1 | 费用结算 | 5d | 2017-04-17 A | 2017-04-24 |  | 80% | 1d | 36.8d | 0d | start no earlier than 2017-04-17 | 王鑫 | 40h | 32h |
| 148 | WBS-4.1.2.140.2 | 收款作业 | 3.5d | 2017-04-25 | 2017-04-28 | 147 |  |  | 36.8d | 0d |  | 王鑫 | 28h |  |
| 149 | WBS-4.1.2.140.3 | 取消结算 | 2.5d | 2017-04-28 | 2017-05-03 | 148 |  |  | 36.8d | 0d |  | 王鑫 | 20h |  |
| 150 | WBS-4.1.2.140.4 | 预收款管理 | 4d | 2017-05-04 A | 2017-05-09 | 149 | 95% | 0.2d | 33d | 0d |  | 丁超宇 | 32h | 30.4h |
| 151 | WBS-4.1.2.140.5 | 结算关单 | 4d | 2017-05-10 | 2017-05-15 | 150 |  |  | 33d | 0d |  | 王鑫 | 32h |  |
| 152 | WBS-4.1.2.140.6 | 财务应付账款管理 | 4d | 2017-05-16 | 2017-05-19 | 151 |  |  | 33d |  |  | 王鑫 | 32h |  |
| 153 | WBS-4.1.2.140.8 | 整车应付账款管理（X） | 3d | 2017-05-02 A | 2017-05-04 | 104 | 50% | 1.5d | 29.5d | 0d |  |  |  |  |
| 154 | WBS-4.1.2.149 | **市场活动** | 6d | 2017-04-19 A | 2017-04-26 |  | 39% | 3.64d | 49d |  |  |  | 48h | 18.88h |
| 155 | WBS-4.1.2.149.1 | 服务活动管理 | 4d | 2017-04-19 A | 2017-04-24 |  | 10% | 3.6d | 50.96d | 0d | finish no earlier than 2017-04-24 | 丁超宇 | 32h | 3.2h |
| 156 | WBS-4.1.2.149.2 | 参与活动车辆查询 | 2d | 2017-04-25 A | 2017-04-26 | 155 | 98% | 0.04d | 49d |  |  | 丁超宇 | 16h | 15.68h |
| 157 | 1.1.1.8 | **会员管理** | 37.5d | 2017-04-12 | 2017-06-06 |  |  |  | 22.5d |  |  |  | 232h |  |
| 158 | 1.1.1.8.1 | 会员申请 | 2d | 2017-04-12 | 2017-04-13 |  |  |  | 28d | 0d | start no earlier than 2017-04-12 |  |  |  |
| 159 | 1.1.1.8.2 | 会员卡信息维护 | 4.5d | 2017-04-14 | 2017-04-20 | 158 |  |  | 28d | 0d |  | TBD1 | 36h |  |
| 160 | 1.1.1.8.3 | 会员卡信息查询 | 2d | 2017-04-20 | 2017-04-24 | 159 |  |  | 28d | 0d |  | TBD1 | 16h |  |
| 161 | 1.1.1.8.4 | 积分明细查询 | 2d | 2017-04-24 | 2017-04-26 | 160 |  |  | 28d | 0d |  | TBD1 | 16h |  |
| 162 | 1.1.1.8.5 | 积分明细调整 | 2d | 2017-04-26 | 2017-04-28 | 161 |  |  | 28d | 0d |  | TBD1 | 16h |  |
| 163 | 1.1.1.8.6 | 会员储值明细查询 | 2d | 2017-04-28 | 2017-05-03 | 162 |  |  | 28d | 0d |  | TBD1 | 16h |  |
| 164 | 1.1.1.8.7 | 积分转让 | 3d | 2017-05-03 | 2017-05-08 | 163 |  |  | 28d | 0d |  | TBD1 | 24h |  |
| 165 | 1.1.1.8.8 | 积分兑换礼品 | 2.5d | 2017-05-08 | 2017-05-10 | 164 |  |  | 28d | 0d |  | TBD1 | 20h |  |
| 166 | 1.1.1.8.9 | 积分兑换礼品查询 | 2d | 2017-05-11 | 2017-05-12 | 165 |  |  | 28d | 0d |  | TBD1 | 16h |  |
| 167 | 1.1.1.8.10 | 积分排行 | 1.5d | 2017-05-15 | 2017-05-16 | 166 |  |  | 28d | 0d |  | TBD1 | 12h |  |
| 168 | 1.1.1.8.11 | 会员卡服务项目定义 | 1.5d | 2017-05-16 | 2017-05-17 | 167 |  |  | 28d |  |  | TBD1 | 12h |  |
| 169 | 1.1.1.8.12 | 会员卡流水记录 | 4d | 2017-05-26 | 2017-06-02 | 327 |  |  | 13.5d | 0d |  | TBD6 | 32h |  |
| 170 | 1.1.1.8.13 | 会员级别调整 | 2d | 2017-06-02 | 2017-06-06 | 169 |  |  | 13.5d | 0d |  | TBD6 | 16h |  |

| ID | WBS | Task | Duration | Start | Finish | Predecessors | Total slack | Free slack | Constraint | Resources | Work |
| --- | --- | --- | --- | --- | --- | --- | --- | --- | --- | --- | --- |
| 171 | WBS-4.1.2.161 | **报表管理** | 33d | 2017-05-22 | 2017-07-06 |  | 0d |  |  |  | 1368h |
| 172 | WBS-4.1.2.161.125 | 当月进厂客户微信绑定率报表 | 3d | 2017-05-22 | 2017-05-24 |  | 0d |  | start no earlier than 2017-05-22 | TBD7 | 24h |
| 173 | WBS-4.1.2.161.126 | 维修业务成本查询 | 3d | 2017-05-25 | 2017-05-27 | 172 | 0d |  | start no earlier than 2017-05-22 | TBD7 | 24h |
| 174 | WBS-4.1.2.161.127 | 车主车辆资料查询 | 3d | 2017-05-31 | 2017-06-02 | 173 | 0d |  | start no earlier than 2017-05-23 | TBD7 | 24h |
| 175 | WBS-4.1.2.161.128 | 进厂车辆日报 | 3d | 2017-06-05 | 2017-06-07 | 174 | 0d |  | start no earlier than 2017-05-23 | TBD7 | 24h |
| 176 | WBS-4.1.2.161.129 | 进厂车辆月报 | 3d | 2017-06-08 | 2017-06-12 | 175 | 0d |  | start no earlier than 2017-05-24 | TBD7 | 24h |
| 177 | WBS-4.1.2.161.130 | 维修项目统计 | 3d | 2017-06-13 | 2017-06-15 | 176 | 0d |  | start no earlier than 2017-05-24 | TBD7 | 24h |
| 178 | WBS-4.1.2.161.131 | 车辆统计报表 | 3d | 2017-06-16 | 2017-06-20 | 177 | 0d |  | start no earlier than 2017-05-25 | TBD7 | 24h |
| 179 | WBS-4.1.2.161.132 | 技师维修台次统计 | 3d | 2017-06-21 | 2017-06-23 | 178 | 0d |  | start no earlier than 2017-05-25 | TBD7 | 24h |
| 180 | WBS-4.1.2.161.133 | 常用维修项目统计 | 3d | 2017-06-26 | 2017-06-28 | 179 | 0d |  | start no earlier than 2017-05-26 | TBD7 | 24h |
| 181 | WBS-4.1.2.161.134 | 配件库存明细查询 | 3d | 2017-06-29 | 2017-07-03 | 180 | 0d |  | start no earlier than 2017-05-26 | TBD7 | 24h |
| 182 | WBS-4.1.2.161.135 | 配件销售价格查询 | 3d | 2017-05-22 | 2017-05-24 |  | 0d |  | start no earlier than 2017-05-22 | TBD8 | 24h |
| 183 | WBS-4.1.2.161.136 | 采购入库统计 | 3d | 2017-05-25 | 2017-05-27 | 182 | 0d |  | start no earlier than 2017-05-25 | TBD8 | 24h |
| 184 | WBS-4.1.2.161.137 | 维修发料统计 | 3d | 2017-05-31 | 2017-06-02 | 183 | 0d |  | start no earlier than 2017-05-31 | TBD8 | 24h |
| 185 | WBS-4.1.2.161.138 | 配件销售统计 | 3d | 2017-06-05 | 2017-06-07 | 184 | 0d |  | start no earlier than 2017-05-31 | TBD8 | 24h |
| 186 | WBS-4.1.2.161.139 | 车间借料统计 | 3d | 2017-06-08 | 2017-06-12 | 185 | 0d |  | start no earlier than 2017-06-01 | TBD8 | 24h |
| 187 | WBS-4.1.2.161.140 | 内部领用统计 | 3d | 2017-06-13 | 2017-06-15 | 186 | 0d |  | start no earlier than 2017-06-01 | TBD8 | 24h |
| 188 | WBS-4.1.2.161.141 | 借用情况统计 | 3d | 2017-06-16 | 2017-06-20 | 187 | 0d |  | start no earlier than 2017-06-02 | TBD8 | 24h |
| 189 | WBS-4.1.2.161.142 | 配件移库统计 | 3d | 2017-06-21 | 2017-06-23 | 188 | 0d |  | start no earlier than 2017-06-02 | TBD8 | 24h |
| 190 | WBS-4.1.2.161.143 | 报溢报损统计 | 3d | 2017-06-26 | 2017-06-28 | 189 | 0d |  | start no earlier than 2017-06-05 | TBD8 | 24h |
| 191 | WBS-4.1.2.161.144 | 出入库单据查询 | 3d | 2017-06-29 | 2017-07-03 | 190 | 0d |  | start no earlier than 2017-06-05 | TBD8 | 24h |
| 192 | WBS-4.1.2.161.145 | 配件进销存明细 | 3d | 2017-05-22 | 2017-05-24 |  | 0d |  | start no earlier than 2017-05-22 | TBD9 | 24h |
| 193 | WBS-4.1.2.161.146 | 配件进销存汇总 | 3d | 2017-05-25 | 2017-05-27 | 192 | 0d |  | start no earlier than 2017-05-25 | TBD9 | 24h |
| 194 | WBS-4.1.2.161.147 | 装饰装潢发料统计 | 3d | 2017-05-31 | 2017-06-02 | 193 | 0d |  | start no earlier than 2017-05-31 | TBD9 | 24h |
| 195 | WBS-4.1.2.161.148 | 配件月报表 | 3d | 2017-06-05 | 2017-06-07 | 194 | 0d |  | start no earlier than 2017-06-05 | TBD9 | 24h |
| 196 | WBS-4.1.2.161.149 | 配件出库排名 | 3d | 2017-06-08 | 2017-06-12 | 195 | 0d |  | start no earlier than 2017-06-08 | TBD9 | 24h |
| 197 | WBS-4.1.2.161.150 | 配件采购登记台帐 | 3d | 2017-06-13 | 2017-06-15 | 196 | 0d |  | start no earlier than 2017-06-08 | TBD9 | 24h |
| 198 | WBS-4.1.2.161.151 | 盘点查询 | 3d | 2017-06-16 | 2017-06-20 | 197 | 0d |  | start no earlier than 2017-06-09 | TBD9 | 24h |
| 199 | WBS-4.1.2.161.152 | 配件预留查询 | 3d | 2017-06-21 | 2017-06-23 | 198 | 0d |  | start no earlier than 2017-06-09 | TBD9 | 24h |
| 200 | WBS-4.1.2.161.153 | 配件基本信息查询 | 3d | 2017-06-26 | 2017-06-28 | 199 | 0d |  | start no earlier than 2017-06-12 | TBD9 | 24h |
| 201 | WBS-4.1.2.161.154 | 配件库龄查询 | 3d | 2017-06-29 | 2017-07-03 | 200 | 0d |  | start no earlier than 2017-06-12 | TBD9 | 24h |
| 202 | WBS-4.1.2.161.155 | 配件满足率 | 3d | 2017-05-22 | 2017-05-24 |  | 0d |  | start no earlier than 2017-05-22 | TBD10 | 24h |
| 203 | WBS-4.1.2.161.156 | 工单满足率 | 3d | 2017-05-25 | 2017-05-27 | 202 | 0d |  | start no earlier than 2017-05-25 | TBD10 | 24h |
| 204 | WBS-4.1.2.161.157 | 收款情况查询 | 3d | 2017-05-31 | 2017-06-02 | 203 | 0d |  | start no earlier than 2017-05-31 | TBD10 | 24h |
| 205 | WBS-4.1.2.161.158 | 欠帐信息查询 | 3d | 2017-06-05 | 2017-06-07 | 204 | 0d |  | start no earlier than 2017-06-05 | TBD10 | 24h |
| 206 | WBS-4.1.2.161.159 | 优惠情况查询 | 3d | 2017-06-08 | 2017-06-12 | 205 | 0d |  | start no earlier than 2017-06-08 | TBD10 | 24h |
| 207 | WBS-4.1.2.161.160 | 减免情况查询 | 3d | 2017-06-13 | 2017-06-15 | 206 | 0d |  | start no earlier than 2017-06-13 | TBD10 | 24h |
| 208 | WBS-4.1.2.161.161 | 去零情况查询 | 3d | 2017-06-16 | 2017-06-20 | 207 | 0d |  | start no earlier than 2017-06-16 | TBD10 | 24h |
| 209 | WBS-4.1.2.161.162 | 单车成本查询 | 3d | 2017-06-21 | 2017-06-23 | 208 | 0d |  | start no earlier than 2017-06-16 | TBD10 | 24h |
| 210 | WBS-4.1.2.161.163 | 结算单明细查询 | 3d | 2017-06-26 | 2017-06-28 | 209 | 0d |  | start no earlier than 2017-06-19 | TBD10 | 24h |
| 211 | WBS-4.1.2.161.164 | 收费对象情况查询 | 3d | 2017-06-29 | 2017-07-03 | 210 | 0d |  | start no earlier than 2017-06-19 | TBD10 | 24h |
| 212 | WBS-4.1.2.161.165 | 营业额统计报表查询 | 3d | 2017-05-22 | 2017-05-24 |  | 6d | 0d | start no earlier than 2017-05-22 | TBD11 | 24h |
| 213 | WBS-4.1.2.161.166 | 售后产值统计 | 3d | 2017-05-25 | 2017-05-27 | 212 | 6d | 0d | start no earlier than 2017-05-25 | TBD11 | 24h |
| 214 | WBS-4.1.2.161.167 | 结算单维修项目统计 | 3d | 2017-05-31 | 2017-06-02 | 213 | 6d | 0d | start no earlier than 2017-05-31 | TBD11 | 24h |
| 215 | WBS-4.1.2.161.168 | 预收款查询 | 3d | 2017-06-05 | 2017-06-07 | 214 | 6d | 0d | start no earlier than 2017-06-05 | TBD11 | 24h |
| 216 | WBS-4.1.2.161.169 | 财务数据上报 | 3d | 2017-06-08 | 2017-06-12 | 215 | 6d | 3d | start no earlier than 2017-06-08 | TBD11 | 24h |
| 217 | WBS-4.1.2.161.171 | 礼券使用统计报表 | 3d | 2017-06-16 | 2017-06-20 | 216 | 3d | 0d | start no earlier than 2017-06-16 | TBD11 | 24h |
| 218 | WBS-4.1.2.161.172 | 技师工时统计表 | 3d | 2017-06-21 | 2017-06-23 | 217 | 3d | 0d | start no earlier than 2017-06-21 | TBD11 | 24h |
| 219 | WBS-4.1.2.161.173 | 客户经理绩效统计表 | 3d | 2017-06-26 | 2017-06-28 | 218 | 3d | 0d | start no earlier than 2017-06-26 | TBD11 | 24h |
| 220 | WBS-4.1.2.161.174 | 技师领料统计 | 3d | 2017-06-29 | 2017-07-03 | 219 | 3d |  | start no earlier than 2017-06-29 | TBD11 | 24h |
| 221 | WBS-4.1.2.161.175 | 装潢派工技师绩效统计表 | 3d | 2017-05-22 | 2017-05-24 |  | 30d |  | start no earlier than 2017-05-22 | TBD12 | 24h |
| 222 | WBS-4.1.2.161.191 | 市场活动统计表 | 3d | 2017-06-16 | 2017-06-20 |  | 6d | 3d | start no earlier than 2017-06-16 | TBD13 | 24h |
| 223 | WBS-4.1.2.161.193 | 经营综合日报表 | 3d | 2017-06-26 | 2017-06-28 | 222 | 3d | 0d | start no earlier than 2017-06-26 | TBD13 | 24h |
| 224 | WBS-4.1.2.161.194 | 经营综合日报表 | 3d | 2017-06-29 | 2017-07-03 | 223 | 3d |  | start no earlier than 2017-06-29 | TBD13 | 24h |
| 225 | WBS-4.1.2.161.195 | 车主预约响应及时率日报 | 3d | 2017-07-04 | 2017-07-06 | 181 | 0d |  | start no earlier than 2017-06-13 | TBD7 | 24h |
| 226 | WBS-4.1.2.161.196 | 手工填写 | 3d | 2017-07-04 | 2017-07-06 | 191 | 0d |  | start no earlier than 2017-06-14 | TBD8 | 24h |
| 227 | WBS-4.1.2.161.197 | 经营月报表 | 3d | 2017-07-04 | 2017-07-06 | 201 | 0d |  | start no earlier than 2017-06-15 | TBD9 | 24h |
| 228 | WBS-4.1.2.161.198 | 吸收率月报表 | 3d | 2017-07-04 | 2017-07-06 | 211 | 0d |  | start no earlier than 2017-06-15 | TBD10 | 24h |

| ID | WBS | Task | Duration | Start | Finish | Predecessors | Complete | Remaining | Total slack | Free slack | Constraint | Resources | Work | Actual work |
| --- | --- | --- | --- | --- | --- | --- | --- | --- | --- | --- | --- | --- | --- | --- |
| 229 | WBS-4.1.2.160 | **接口开发** | 29.25d? | 2017-04-06 A | 2017-05-18 |  | 41% | 17.33d? | 34.75d |  |  |  | 270h | 110h |
| 230 | WBS-4.1.2.160.71 | CLDMS005 配件基本信息下发 | 0.5d | 2017-04-18 A | 2017-04-18 A |  | 100% |  |  |  | start no earlier than 2017-04-18 | 司朋 | 4h | 4h |
| 231 | WBS-4.1.2.160.72 | CLDMS006 工时数据下发 | 0.5d | 2017-04-18 A | 2017-04-18 A | 230 | 100% |  |  |  |  | 司朋 | 4h | 4h |
| 232 | WBS-4.1.2.160.73 | CLDMS007 OEM下发优惠模式 | 0.5d | 2017-04-19 A | 2017-04-19 A | 231 | 100% |  |  |  |  | 司朋 | 4h | 4h |
| 233 | WBS-4.1.2.160.74 | CLDMS008 保养套餐下发 | 0.5d | 2017-04-19 A | 2017-04-19 A | 232 | 100% |  |  |  |  | 司朋 | 4h | 4h |
| 234 | WBS-4.1.2.160.75 | SEDMS005 服务活动下发 | 0.5d | 2017-04-20 A | 2017-04-20 A | 233 | 100% |  |  |  |  | 司朋 | 4h | 4h |
| 235 | WBS-4.1.2.160.76 | CLDMS010 工时单价下发 | 0.5d | 2017-04-20 A | 2017-04-20 A | 234 | 100% |  |  |  |  | 司朋 | 4h | 4h |
| 236 | WBS-4.1.2.160.77 | CLDMS011 附加项目下发 | 0.5d | 2017-04-21 A | 2017-04-21 A | 235 | 100% |  |  |  |  | 司朋 | 4h | 4h |
| 237 | WBS-4.1.2.160.78 | SADMS012 计划任务上报超过48小时未结算的索赔工单 | 0.5d | 2017-04-21 A | 2017-04-21 A | 236 | 100% |  |  |  |  | 司朋 | 4h | 4h |
| 238 | WBS-4.1.2.160.79 | SADMS019 将符合条件的客户经理上传至微信平台 | 0.5d | 2017-04-24 A | 2017-04-24 A | 237 | 100% |  |  |  |  | 司朋 | 4h | 4h |
| 239 | WBS-4.1.2.160.80 | SADMS020 微信车主信息下发 | 0.5d | 2017-04-24 A | 2017-04-24 A | 238 | 100% |  |  |  |  | 司朋 | 4h | 4h |
| 240 | WBS-4.1.2.160.81 | SADMS021 一对一客户经理绑定修改下发 | 0.5d | 2017-04-25 A | 2017-04-25 A | 239 | 100% |  |  |  |  | 司朋 | 4h | 4h |
| 241 | WBS-4.1.2.160.82 | SADMS051 经营月报表上报 | 0.5d | 2017-04-25 A | 2017-04-25 A | 240 | 100% |  |  |  |  | 司朋 | 4h | 4h |
| 242 | WBS-4.1.2.160.83 | SADMS052 吸收率报表上报 | 0.5d | 2017-04-26 A | 2017-04-26 A | 241 | 100% |  |  |  |  | 司朋 | 4h | 4h |
| 243 | WBS-4.1.2.160.84 | SEDMS001 上传车主关键信息变更历史 | 0.5d | 2017-04-26 A | 2017-04-26 A | 242 | 100% |  |  |  |  | 司朋 | 4h | 4h |
| 244 | WBS-4.1.2.160.85 | SEDMS002 上传车牌 变更信息 | 0.5d | 2017-04-27 A | 2017-04-27 A | 110 | 100% |  |  |  |  | 司朋 | 4h | 4h |
| 245 | WBS-4.1.2.160.86 | SEDMS004 车主车辆新增车辆同步获取厂端数据 | 0.5d | 2017-04-27 | 2017-04-27 | 244 |  |  | 48d |  |  | 司朋 | 4h |  |
| 246 | WBS-4.1.2.160.87 | SEDMS005 下发服务活动 | 0.5d | 2017-04-28 A | 2017-04-28 A | 245 | 100% |  |  |  |  | 司朋 | 4h | 4h |
| 247 | WBS-4.1.2.160.88 | SEDMS006 下发配件货运单信息 | 0.5d | 2017-04-28 A | 2017-04-28 A | 246 | 100% |  |  |  |  | 司朋 | 4h | 4h |
| 248 | WBS-4.1.2.160.89 | SEDMS007 经销商上报车辆维修信息（维修结算上报） | 0.5d | 2017-05-02 A | 2017-05-02 A | 247 | 100% |  |  |  |  | 司朋 | 4h | 4h |
| 249 | WBS-4.1.2.160.90 | SEDMS008 经销商库存信息上报 | 0.5d | 2017-05-02 A | 2017-05-02 A | 248 | 100% |  |  |  |  | 司朋 | 4h | 4h |
| 250 | WBS-4.1.2.160.91 | SEDMS009 服务活动完成情况下发 | 0.5d | 2017-05-03 A | 2017-05-03 A | 249 | 100% |  |  |  |  | 司朋 | 4h | 4h |
| 251 | WBS-4.1.2.160.92 | SEDMS010 上报三包维修方案 | 0.5d | 2017-05-03 A | 2017-05-03 A | 250 | 100% |  |  |  | start no earlier than 2017-04-06 | 司朋 | 4h | 4h |
| 252 | WBS-4.1.2.160.93 | SEDMS011 三包状态下发 | 0.25d | 2017-05-04 A | 2017-05-04 A | 251 | 100% |  |  |  |  | 司朋 | 2h | 2h |
| 253 | WBS-4.1.2.160.94 | SEDMS012 经销商上报未结算的索赔工单 | 0.25d | 2017-05-04 A | 2017-05-04 A | 252 | 100% |  |  |  |  | 司朋 | 2h | 2h |
| 254 | WBS-4.1.2.160.95 | SEDMS013 经销商上报未结算的索赔工单的变更删除业务上报 | 0.25d | 2017-05-04 A | 2017-05-04 A | 253 | 100% |  |  |  |  | 司朋 | 2h | 2h |
| 255 | WBS-4.1.2.160.96 | SEDMS016 将符合条件的客户经理上传至微信平台 | 0.25d | 2017-05-04 A | 2017-05-04 A | 254 | 100% |  |  |  |  | 司朋 | 2h | 2h |
| 256 | WBS-4.1.2.160.97 | CLDMS018 接收保养套餐主数据 | 0.25d | 2017-05-05 A | 2017-05-05 A | 255 | 100% |  |  |  |  | 司朋 | 2h | 2h |
| 257 | WBS-4.1.2.160.98 | SADMS099 保养套餐修改上报接口 | 0.25d | 2017-05-05 A | 2017-05-05 A | 256 | 100% |  |  |  |  | 司朋 | 2h | 2h |
| 258 | WBS-4.1.2.160.99 | SADMS111 限价车系及维修类型数据下发接口 | 0.25d | 2017-05-05 A | 2017-05-05 A | 257 | 100% |  |  |  |  | 司朋 | 2h | 2h |
| 259 | WBS-4.1.2.160.100 | SADMS112 计划任务每日上报未结算的工单接口 | 0.25d | 2017-05-05 A | 2017-05-05 A | 258 | 100% |  |  |  |  | 司朋 | 2h | 2h |
| 260 | WBS-4.1.2.160.101 | SADMS113 未结算的工单作废上报接口 | 0.25d | 2017-05-08 A | 2017-05-08 A | 259 | 100% |  |  |  |  | 司朋 | 2h | 2h |
| 261 | WBS-4.1.2.160.102 | SADMS061 一对一客户经理绑定 | 0.25d | 2017-05-08 A | 2017-05-08 A | 260 | 100% |  |  |  |  | 司朋 | 2h | 2h |
| 262 | WBS-4.1.2.160.103 | CLDMS013 接收微信绑定信息 | 0.25d | 2017-05-08 A | 2017-05-08 A | 261 | 100% |  |  |  |  | 司朋 | 2h | 2h |
| 263 | WBS-4.1.2.160.104 | CLDMS014 修改微信首要联系方式 | 0.25d | 2017-05-08 A | 2017-05-08 A | 262 | 100% |  |  |  |  | 司朋 | 2h | 2h |
| 264 | WBS-4.1.2.160.105 | CLDMS015 微信解绑 | 0.25d | 2017-05-09 A | 2017-05-09 A | 263 | 100% |  |  |  |  | 司朋 | 2h | 2h |
| 265 | WBS-4.1.2.160.106 | SADMS026 计划任务统计配件入库来源监控报表并上报总部 | 0.25d | 2017-05-09 | 2017-05-09 | 264 |  |  | 34.75d | 0d |  | 司朋 | 2h |  |
| 266 | WBS-4.1.2.160.107 | SADMS027 配件采购入库、调拨入库、报溢入库 入账后上报总部入库单明细信息 | 0.25d | 2017-05-09 | 2017-05-09 | 265 |  |  | 34.75d | 0d |  | 司朋 | 2h |  |
| 267 | WBS-4.1.2.160.108 | SADMS058 固化进展车辆微信绑定状况并上报 | 0.25d | 2017-05-09 | 2017-05-09 | 266 |  |  | 34.75d | 0d |  | 司朋 | 2h |  |
| 268 | WBS-4.1.2.160.109 | SADMS059 保险公司信息下发 | 0.25d | 2017-05-10 | 2017-05-10 | 267 |  |  | 34.75d | 0d |  | 司朋 | 2h |  |
| 269 | WBS-4.1.2.160.110 | SADMS060 险种信息下发 | 0.25d | 2017-05-10 | 2017-05-10 | 268 |  |  | 34.75d | 0d |  | 司朋 | 2h |  |
| 270 | WBS-4.1.2.160.111 | SADMS062 将已完成采购的三包预警缺料的配件缺料信息进行上报 | 0.25d | 2017-05-10 | 2017-05-10 | 269 |  |  | 34.75d | 0d |  | 司朋 | 2h |  |
| 271 | WBS-4.1.2.160.112 | SADMS087 计划任务WebService上报过期车主微信预约接口 | 0.25d | 2017-05-10 | 2017-05-10 | 270 |  |  | 34.75d | 0d |  | 司朋 | 2h |  |
| 272 | WBS-4.1.2.160.113 | SADMS088 上报微信预约信息接口 | 0.25d | 2017-05-11 | 2017-05-11 | 271 |  |  | 34.75d | 0d | start no earlier than 2017-04-06 | 司朋 | 2h |  |
| 273 | WBS-4.1.2.160.114 | SADMS094 销售限价信息上报 | 0.25d | 2017-05-11 | 2017-05-11 | 272 |  |  | 34.75d | 0d |  | 司朋 | 2h |  |
| 274 | WBS-4.1.2.160.115 | SEDMS023 维修工单处跨店维修的车辆根据VIN同步获取总部车主车辆信息 | 0.25d | 2017-05-11 | 2017-05-11 | 273 |  |  | 34.75d | 0d |  | 司朋 | 2h |  |
| 275 | WBS-4.1.2.160.116 | SEDMS055 服务活动完成情况下发 | 0.25d | 2017-05-11 | 2017-05-11 | 274 |  |  | 34.75d | 0d |  | 司朋 | 2h |  |
| 276 | WBS-4.1.2.160.117 | SEDMS056 上报投保单信息 | 0.25d | 2017-05-12 | 2017-05-12 | 275 |  |  | 34.75d | 0d |  | 司朋 | 2h |  |
| 277 | WBS-4.1.2.160.118 | SEDMS058 文档电子化上报订单信息 | 0.25d | 2017-05-12 | 2017-05-12 | 276 |  |  | 34.75d | 0d |  | 司朋 | 2h |  |
| 278 | WBS-4.1.2.160.119 | SEDMS059 上报续保战败信息 | 0.25d | 2017-05-12 | 2017-05-12 | 277 |  |  | 34.75d | 0d |  | 司朋 | 2h |  |
| 279 | WBS-4.1.2.160.120 | SEDMSP03 上报菲亚特配件订货计划 | 0.25d | 2017-05-12 | 2017-05-12 | 278 |  |  | 34.75d | 0d |  | 司朋 | 2h |  |
| 280 | WBS-4.1.2.160.121 | SEDMSP17 菲亚特配件订货审核结果接收 | 0.25d | 2017-05-15 | 2017-05-15 | 279 |  |  | 34.75d | 0d |  | 司朋 | 2h |  |
| 281 | WBS-4.1.2.160.122 | SEDMSP6 菲亚特配件货运单下发接口 | 0.25d | 2017-05-15 | 2017-05-15 | 280 |  |  | 34.75d | 0d |  | 司朋 | 2h |  |
| 282 | WBS-4.1.2.160.123 | SEDMSP14 菲亚特配件货运单回执 | 0.25d | 2017-05-15 | 2017-05-15 | 281 |  |  | 34.75d | 0d |  | 司朋 | 2h |  |
| 283 | WBS-4.1.2.160.124 | SEDCSP15 索赔单上报 | 0.25d | 2017-05-15 | 2017-05-15 | 282 |  |  | 34.75d | 0d |  | 司朋 | 2h |  |
| 284 | WBS-4.1.2.160.125 | SEDMSP16 索赔单状态审核结果接收 | 0.25d | 2017-05-16 | 2017-05-16 | 283 |  |  | 34.75d | 0d |  | 司朋 | 2h |  |
| 285 | WBS-4.1.2.160.126 | SADMS065 直销车车主车辆信息下发 | 0.25d | 2017-05-16 | 2017-05-16 | 284 |  |  | 34.75d | 0d |  | 司朋 | 2h |  |
| 286 | WBS-4.1.2.160.127 | SEDCS015 维修工时接收接口 | 0.25d | 2017-05-16 | 2017-05-16 | 285 |  |  | 34.75d | 0d |  | 司朋 | 2h |  |
| 287 | WBS-4.1.2.160.128 | SEDCS016 行管经销商接收接口 | 0.25d | 2017-05-16 | 2017-05-16 | 286 |  |  | 34.75d | 0d |  | 司朋 | 2h |  |
| 288 | WBS-4.1.2.160.129 | SEDCS017 维修工时分类参数接收 | 0.25d | 2017-05-17 | 2017-05-17 | 287 |  |  | 34.75d | 0d |  | 司朋 | 2h |  |
| 289 | WBS-4.1.2.160.130 | SADCS073 车主信息上报接口 | 0.25d | 2017-05-17 | 2017-05-17 | 288 |  |  | 34.75d | 0d |  | 司朋 | 2h |  |
| 290 | WBS-4.1.2.160.131 | SEDMS072 车主信息更新下发接口 | 0.25d | 2017-05-17 | 2017-05-17 | 289 |  |  | 34.75d | 0d |  | 司朋 | 2h |  |
| 291 | WBS-4.1.2.160.132 | SEDMS074 开票日期更新信息下发接口 | 0.25d | 2017-05-17 | 2017-05-17 | 290 |  |  | 34.75d | 0d |  | 司朋 | 2h |  |
| 292 | WBS-4.1.2.160.133 | SEDMS075 保险营销活动卡券下发接口 | 0.25d | 2017-05-18 | 2017-05-18 | 291 |  |  | 34.75d |  |  | 司朋 | 2h |  |
| 293 | WBS-4.1.2.160.134 | SEDMS019 售后召回活动接口 | 0.5d | 2017-04-06 | 2017-04-06 |  |  |  | 51.5d | 0d | start no earlier than 2017-04-06 | TBD6 | 4h |  |
| 294 | WBS-4.1.2.160.135 | SEDMS076 GCS导入车辆接收接口 | 0.5d | 2017-04-06 | 2017-04-06 | 293 |  |  | 51.5d | 0d |  | TBD6 | 4h |  |
| 295 | WBS-4.1.2.160.136 | SEDMS020 召回活动取消发布接收接口 | 0.5d | 2017-04-07 | 2017-04-07 | 294 |  |  | 51.5d | 0d |  | TBD6 | 4h |  |
| 296 | WBS-4.1.2.160.137 | SEDCS019 业务往来客户接收接口 | 0.5d | 2017-04-07 | 2017-04-07 | 295 |  |  | 51.5d | 0d |  | TBD6 | 4h |  |
| 297 | WBS-4.1.2.160.138 | SEPA02 在线调拨出库单上报接口 | 0.5d | 2017-04-10 | 2017-04-10 | 296 |  |  | 51.5d | 0d |  | TBD6 | 4h |  |
| 298 | WBS-4.1.2.160.139 | SEPA04 在线调拨入库单上报接口 | 0.5d | 2017-04-10 | 2017-04-10 | 297 |  |  | 51.5d | 0d |  | TBD6 | 4h |  |

| ID | WBS | Task | Duration | Start | Finish | Predecessors | Total slack | Free slack | Constraint | Resources | Work |
| --- | --- | --- | --- | --- | --- | --- | --- | --- | --- | --- | --- |
| 299 | WBS-4.1.2.160.140 | SEDCS018 在线调拨入库单下发接口 | 0.5d | 2017-04-11 | 2017-04-11 | 298 | 51.5d | 0d |  | TBD6 | 4h |
| 300 | 1.1.1.10.71 | 配件限价接口webservice | 3d | 2017-04-11 | 2017-04-14 | 299 | 51.5d | 0d |  | TBD6 | 24h |
| 301 | 1.1.1.10.72 | 提交结算限价车系校验接口 | 3d | 2017-04-14 | 2017-04-19 | 300 | 51.5d | 0d |  | TBD6 | 24h |
| 302 | 1.1.1.10.73 | 校验参加唯一性活动是否多次接口 | 3d? | 2017-04-19 | 2017-04-24 | 301 | 51.5d |  |  | TBD6 | 24h |
| 303 | WBS-4.1.2.162 | **计划任务** | 31.5d | 2017-04-12 | 2017-05-26 |  | 28.5d |  |  |  | 384h |
| 304 | WBS-4.1.2.162.25 | GEN_DAILY_REPORT 执行日结 | 2d | 2017-05-11 | 2017-05-15 | 89 | 33.5d | 0d | start no earlier than 2017-04-12 | 郑聪 | 16h |
| 305 | WBS-4.1.2.162.26 | SEDMS001 上传车主关键信息变更历史 | 2d | 2017-05-15 | 2017-05-17 | 304 | 33.5d | 0d |  | 郑聪 | 16h |
| 306 | WBS-4.1.2.162.27 | SEDMS002 车牌更改信息上报 | 2d | 2017-05-17 | 2017-05-19 | 305 | 33.5d |  |  | 郑聪 | 16h |
| 307 | WBS-4.1.2.162.28 | SEDMS008 配件库存报表上报 | 2d | 2017-04-26 | 2017-04-27 | 106 | 42d | 0d |  | 陈伟 | 16h |
| 308 | WBS-4.1.2.162.29 | MAINTAIN_TECHNICIA_I 计划任务跑技师 | 2d | 2017-04-28 | 2017-05-02 | 307 | 42d | 0d |  | 陈伟 | 16h |
| 309 | WBS-4.1.2.162.30 | MAINTAIN_OUT_PUT_STATICS 计划任务产值报表 | 2d | 2017-05-03 | 2017-05-04 | 308 | 42d | 0d |  | 陈伟 | 16h |
| 310 | WBS-4.1.2.162.31 | DELETE_PART_BOLIGATED 配件解预留 | 2d | 2017-05-05 | 2017-05-08 | 309 | 42d |  |  | 陈伟 | 16h |
| 311 | WBS-4.1.2.162.32 | COMPUTE_STOCK_MIN_QUANTITY 配件安全库存计算 | 2d | 2017-04-12 | 2017-04-13 |  | 34d | 0d | start no earlier than 2017-04-12 | TBD15 | 16h |
| 312 | WBS-4.1.2.162.33 | SADMS026 计划任务上报统计配件入库来源监控报表 | 2d | 2017-04-14 | 2017-04-17 | 311 | 34d | 0d |  | TBD15 | 16h |
| 313 | WBS-4.1.2.162.34 | MAINTAIN_BUSINESS_CHRYSLER_MONTHLY 计划任务上报统计配件入库来源监控报表 | 2d | 2017-04-18 | 2017-04-19 | 312 | 34d | 0d |  | TBD15 | 16h |
| 314 | WBS-4.1.2.162.35 | SADMS051 计划任务上报克莱斯勒经营月报 | 2d | 2017-04-20 | 2017-04-21 | 313 | 34d | 0d | start no earlier than 2017-04-06 | TBD15 | 16h |
| 315 | WBS-4.1.2.162.36 | MAINTAIN_ABSORB_RATE_CHRYSLER 计划任务生成克莱斯勒吸收率报表 | 2d | 2017-04-24 | 2017-04-25 | 314 | 34d | 0d |  | TBD15 | 16h |
| 316 | WBS-4.1.2.162.37 | SADMS052 计划任务上报克莱斯勒吸收率报表 | 2d | 2017-04-26 | 2017-04-27 | 315 | 34d | 0d |  | TBD15 | 16h |
| 317 | WBS-4.1.2.162.38 | SEDMS059 计划任务每天上报续保战败信息 | 2d | 2017-04-28 | 2017-05-02 | 316 | 34d | 0d | start no earlier than 2017-04-12 | TBD15 | 16h |
| 318 | WBS-4.1.2.162.39 | SADMS012 计划任务每天上报续保战败信息 | 2d | 2017-05-03 | 2017-05-04 | 317 | 34d | 0d |  | TBD15 | 16h |
| 319 | WBS-4.1.2.162.40 | SADMS087 计划任务过期车主微信预约上报 | 2d | 2017-05-05 | 2017-05-08 | 318 | 34d | 0d |  | TBD15 | 16h |
| 320 | WBS-4.1.2.162.41 | SADMS056 计划任务上报试乘试驾统计报表（月报） | 2d | 2017-05-09 | 2017-05-10 | 319 | 34d | 0d |  | TBD15 | 16h |
| 321 | WBS-4.1.2.162.42 | SADMS057 计划任务上报试乘试驾统计报表（周报） | 2d | 2017-05-11 | 2017-05-12 | 320 | 34d | 0d |  | TBD15 | 16h |
| 322 | WBS-4.1.2.162.43 | SADMS058 当月进厂客户微信绑定率报表固话和上报 | 2d | 2017-05-15 | 2017-05-16 | 321 | 34d | 0d |  | TBD15 | 16h |
| 323 | WBS-4.1.2.162.44 | SADMS088 每天微信主数据上报 | 2d | 2017-05-17 | 2017-05-18 | 322 | 34d |  |  | TBD15 | 16h |
| 324 | WBS-4.1.2.162.45 | SADMS094 每天微信主数据上报 | 2d | 2017-05-16 | 2017-05-18 | 62 | 13.5d | 0d |  | 邹凯强 | 16h |
| 325 | WBS-4.1.2.162.46 | ADD_DAILY_PART_STOCK 每天微信主数据上报 | 2d | 2017-05-18 | 2017-05-22 | 324 | 13.5d | 0d |  | 邹凯强 | 16h |
| 326 | WBS-4.1.2.162.47 | SADMS062 每天将已完成采购的三包预警缺料的配件的缺料信息进行上报 | 2d | 2017-05-22 | 2017-05-24 | 325 | 13.5d | 0d |  | 邹凯强 | 16h |
| 327 | WBS-4.1.2.162.48 | SADMS112 计划任务每日上报未结算的工单信息 | 2d | 2017-05-24 | 2017-05-26 | 326 | 13.5d | 0d |  | 邹凯强 | 16h |

| ID | WBS | Task | Duration | Start | Finish | Remaining | Total slack | Constraint | Resources | Work |
| --- | --- | --- | --- | --- | --- | --- | --- | --- | --- | --- |
| 328 | WBS-4.1.2.163 | **集成页面** | 8d | 2017-05-10 A | 2017-05-19 | 8d | 33d |  |  | 528h |
| 329 | WBS-4.1.2.163.59 | **系统管理** | 1d | 2017-05-10 A | 2017-05-10 | 1d | 40d |  |  | 40h |
| 330 | WBS-4.1.2.163.59.6 | 个人信息维护 | 1d | 2017-05-10 A | 2017-05-10 | 1d | 40d |  | TBD2 | 8h |
| 331 | WBS-4.1.2.163.59.7 | 关键岗位人员变更申请 | 1d | 2017-05-10 A | 2017-05-10 | 1d | 40d | finish no earlier than 2017-05-10 | TBD2 | 8h |
| 332 | WBS-4.1.2.163.59.8 | 关键岗位人员信息查询 | 1d | 2017-05-10 A | 2017-05-10 | 1d | 40d | finish no earlier than 2017-05-10 | TBD2 | 8h |
| 333 | WBS-4.1.2.163.59.9 | 关键岗位人员信息历史查询 | 1d | 2017-05-10 A | 2017-05-10 | 1d | 40d | finish no earlier than 2017-05-10 | TBD2 | 8h |
| 334 | WBS-4.1.2.163.59.10 | 经销商基本信息查询 | 1d | 2017-05-10 A | 2017-05-10 | 1d | 40d |  | TBD2 | 8h |
| 335 | WBS-4.1.2.163.60 | **客户管理** | 1d | 2017-05-11 | 2017-05-11 |  | 39d |  |  | 56h |
| 336 | WBS-4.1.2.163.60.42 | 微信预约时段空闲度设定 | 1d | 2017-05-11 | 2017-05-11 |  | 39d | start no earlier than 2017-05-11 | TBD2 | 8h |
| 337 | WBS-4.1.2.163.60.43 | 微信预约专员维护 | 1d | 2017-05-11 | 2017-05-11 |  | 39d | start no earlier than 2017-05-11 | TBD2 | 8h |
| 338 | WBS-4.1.2.163.60.44 | 回访任务处理 | 1d | 2017-05-11 | 2017-05-11 |  | 39d | start no earlier than 2017-05-11 | TBD2 | 8h |
| 339 | WBS-4.1.2.163.60.45 | 客户（总部）投诉处理 | 1d | 2017-05-11 | 2017-05-11 |  | 39d | start no earlier than 2017-05-11 | TBD2 | 8h |
| 340 | WBS-4.1.2.163.60.46 | 客户投诉查询 | 1d | 2017-05-11 | 2017-05-11 |  | 39d | start no earlier than 2017-05-11 | TBD2 | 8h |
| 341 | WBS-4.1.2.163.60.47 | 大客户政策查询 | 1d | 2017-05-11 | 2017-05-11 |  | 39d | start no earlier than 2017-05-11 | TBD2 | 8h |
| 342 | WBS-4.1.2.163.60.48 | 大客户周报查询 | 1d | 2017-05-11 | 2017-05-11 |  | 39d | start no earlier than 2017-05-11 | TBD2 | 8h |
| 343 | WBS-4.1.2.163.61 | **整车管理** | 3d | 2017-05-12 | 2017-05-16 |  | 36d |  |  | 224h |
| 344 | WBS-4.1.2.163.61.29 | 年度目标查询 | 1d | 2017-05-12 | 2017-05-12 |  | 38d | start no earlier than 2017-05-12 | TBD2 | 8h |
| 345 | WBS-4.1.2.163.61.30 | 月度任务查询 | 1d | 2017-05-12 | 2017-05-12 |  | 38d | start no earlier than 2017-05-12 | TBD2 | 8h |
| 346 | WBS-4.1.2.163.61.31 | 生产期货预定录入 | 1d | 2017-05-12 | 2017-05-12 |  | 38d | start no earlier than 2017-05-12 | TBD2 | 8h |
| 347 | WBS-4.1.2.163.61.32 | 生产期货预定查询 | 1d | 2017-05-12 | 2017-05-12 |  | 38d | start no earlier than 2017-05-12 | TBD2 | 8h |
| 348 | WBS-4.1.2.163.61.33 | 生产需求任务录入 | 1d | 2017-05-12 | 2017-05-12 |  | 38d | start no earlier than 2017-05-12 | TBD2 | 8h |
| 349 | WBS-4.1.2.163.61.34 | 生产订单确认上报 | 1d | 2017-05-12 | 2017-05-12 |  | 38d | start no earlier than 2017-05-12 | TBD2 | 8h |
| 350 | WBS-4.1.2.163.61.35 | 生产需求序列号跟踪(DLR) | 1d | 2017-05-12 | 2017-05-12 |  | 38d | start no earlier than 2017-05-12 | TBD2 | 8h |
| 351 | WBS-4.1.2.163.61.36 | 现货车辆预定 | 1d | 2017-05-12 | 2017-05-12 |  | 38d | start no earlier than 2017-05-12 | TBD2 | 8h |
| 352 | WBS-4.1.2.163.61.37 | 期货车辆预定 | 1d | 2017-05-12 | 2017-05-12 |  | 38d | start no earlier than 2017-05-12 | TBD2 | 8h |
| 353 | WBS-4.1.2.163.61.38 | 期货订单确认 | 1d | 2017-05-12 | 2017-05-12 |  | 38d | start no earlier than 2017-05-12 | TBD2 | 8h |
| 354 | WBS-4.1.2.163.61.39 | 销售订单查询 | 1d | 2017-05-15 | 2017-05-15 |  | 37d | start no earlier than 2017-05-15 | TBD2 | 8h |
| 355 | WBS-4.1.2.163.61.40 | 批发计划录入 | 1d | 2017-05-15 | 2017-05-15 |  | 37d | start no earlier than 2017-05-15 | TBD2 | 8h |
| 356 | WBS-4.1.2.163.61.41 | 批发计划查询 | 1d | 2017-05-15 | 2017-05-15 |  | 37d | start no earlier than 2017-05-15 | TBD2 | 8h |
| 357 | WBS-4.1.2.163.61.42 | 车辆调出申请 | 1d | 2017-05-15 | 2017-05-15 |  | 37d | start no earlier than 2017-05-15 | TBD2 | 8h |
| 358 | WBS-4.1.2.163.61.43 | 车辆调拨查询 | 1d | 2017-05-15 | 2017-05-15 |  | 37d | start no earlier than 2017-05-15 | TBD2 | 8h |
| 359 | WBS-4.1.2.163.61.44 | 零售上报 | 1d | 2017-05-15 | 2017-05-15 |  | 37d | start no earlier than 2017-05-15 | TBD2 | 8h |
| 360 | WBS-4.1.2.163.61.45 | 撤单申请 | 1d | 2017-05-15 | 2017-05-15 |  | 37d | start no earlier than 2017-05-15 | TBD2 | 8h |
| 361 | WBS-4.1.2.163.61.46 | 撤单查询 | 1d | 2017-05-15 | 2017-05-15 |  | 37d | start no earlier than 2017-05-15 | TBD2 | 8h |
| 362 | WBS-4.1.2.163.61.47 | 零售金融贴息提报 | 1d | 2017-05-15 | 2017-05-15 |  | 37d | start no earlier than 2017-05-15 | TBD2 | 8h |
| 363 | WBS-4.1.2.163.61.48 | 返利核算汇总查询 | 1d | 2017-05-15 | 2017-05-15 |  | 37d | start no earlier than 2017-05-15 | TBD2 | 8h |
| 364 | WBS-4.1.2.163.61.49 | 定金宝收益金额查询 | 1d | 2017-05-15 | 2017-05-15 |  | 37d | start no earlier than 2017-05-15 | TBD2 | 8h |
| 365 | WBS-4.1.2.163.61.50 | 车辆验收查询 | 1d | 2017-05-16 | 2017-05-16 |  | 36d | start no earlier than 2017-05-16 | TBD2 | 8h |
| 366 | WBS-4.1.2.163.61.51 | 整车订单查询 | 1d | 2017-05-16 | 2017-05-16 |  | 36d | start no earlier than 2017-05-16 | TBD2 | 8h |
| 367 | WBS-4.1.2.163.61.52 | 库存查询 | 1d | 2017-05-16 | 2017-05-16 |  | 36d | start no earlier than 2017-05-16 | TBD2 | 8h |
| 368 | WBS-4.1.2.163.61.53 | 直销车PDI检查 | 1d | 2017-05-16 | 2017-05-16 |  | 36d | start no earlier than 2017-05-16 | TBD2 | 8h |
| 369 | WBS-4.1.2.163.61.54 | 直销车验收入库 | 1d | 2017-05-16 | 2017-05-16 |  | 36d | start no earlier than 2017-05-16 | TBD2 | 8h |
| 370 | WBS-4.1.2.163.61.55 | 直销车交车出库 | 1d | 2017-05-16 | 2017-05-16 |  | 36d | start no earlier than 2017-05-16 | TBD2 | 8h |
| 371 | WBS-4.1.2.163.61.56 | 直销车实销上报 | 1d | 2017-05-16 | 2017-05-16 |  | 36d | start no earlier than 2017-05-16 | TBD2 | 8h |

| ID | WBS | Task | Duration | Start | Finish | Total slack | Constraint | Resources | Work |
| --- | --- | --- | --- | --- | --- | --- | --- | --- | --- |
| 372 | WBS-4.1.2.163.62 | **维修管理** | 1d | 2017-05-16 | 2017-05-16 | 36d |  |  | 8h |
| 373 | WBS-4.1.2.163.62.7 | 车辆维修历史查询 | 1d | 2017-05-16 | 2017-05-16 | 36d | start no earlier than 2017-05-16 | TBD2 | 8h |
| 374 | WBS-4.1.2.163.63 | **配件管理** | 1d | 2017-05-17 | 2017-05-17 | 35d |  |  | 88h |
| 375 | WBS-4.1.2.163.63.67 | 呆滞品发布信息查询 | 1d | 2017-05-17 | 2017-05-17 | 35d | start no earlier than 2017-05-17 | TBD2 | 8h |
| 376 | WBS-4.1.2.163.63.68 | 呆滞品交易确认 | 1d | 2017-05-17 | 2017-05-17 | 35d | start no earlier than 2017-05-17 | TBD2 | 8h |
| 377 | WBS-4.1.2.163.63.69 | 呆滞品交易历史查询 | 1d | 2017-05-17 | 2017-05-17 | 35d | start no earlier than 2017-05-17 | TBD2 | 8h |
| 378 | WBS-4.1.2.163.63.70 | 配件BO订单查询 | 1d | 2017-05-17 | 2017-05-17 | 35d | start no earlier than 2017-05-17 | TBD2 | 8h |
| 379 | WBS-4.1.2.163.63.71 | 配件发票查询 | 1d | 2017-05-17 | 2017-05-17 | 35d | start no earlier than 2017-05-17 | TBD2 | 8h |
| 380 | WBS-4.1.2.163.63.72 | 账户余额查询 | 1d | 2017-05-17 | 2017-05-17 | 35d | start no earlier than 2017-05-17 | TBD2 | 8h |
| 381 | WBS-4.1.2.163.63.73 | 配送订单查询登记 | 1d | 2017-05-17 | 2017-05-17 | 35d | start no earlier than 2017-05-17 | TBD2 | 8h |
| 382 | WBS-4.1.2.163.63.74 | 配件订单确认 | 1d | 2017-05-17 | 2017-05-17 | 35d | start no earlier than 2017-05-17 | TBD2 | 8h |
| 383 | WBS-4.1.2.163.63.75 | 配件往来账查询 | 1d | 2017-05-17 | 2017-05-17 | 35d | start no earlier than 2017-05-17 | TBD2 | 8h |
| 384 | WBS-4.1.2.163.63.76 | 配件返利发放查询 | 1d | 2017-05-17 | 2017-05-17 | 35d | start no earlier than 2017-05-17 | TBD2 | 8h |
| 385 | WBS-4.1.2.163.63.77 | 配件返利使用查询 | 1d | 2017-05-17 | 2017-05-17 | 35d | start no earlier than 2017-05-17 | TBD2 | 8h |
| 386 | WBS-4.1.2.163.64 | **索赔管理** | 1d | 2017-05-18 | 2017-05-18 | 34d |  |  | 64h |
| 387 | WBS-4.1.2.163.64.9 | 索赔预授权维护 | 1d | 2017-05-18 | 2017-05-18 | 34d | start no earlier than 2017-05-18 | TBD2 | 8h |
| 388 | WBS-4.1.2.163.64.10 | 索赔预授权状态查询 | 1d | 2017-05-18 | 2017-05-18 | 34d | start no earlier than 2017-05-18 | TBD2 | 8h |
| 389 | WBS-4.1.2.163.64.11 | 预授权维修项目查询 | 1d | 2017-05-18 | 2017-05-18 | 34d | start no earlier than 2017-05-18 | TBD2 | 8h |
| 390 | WBS-4.1.2.163.64.12 | 预授权其他项目查询 | 1d | 2017-05-18 | 2017-05-18 | 34d | start no earlier than 2017-05-18 | TBD2 | 8h |
| 391 | WBS-4.1.2.163.64.13 | 预授权监控配件查询 | 1d | 2017-05-18 | 2017-05-18 | 34d | start no earlier than 2017-05-18 | TBD2 | 8h |
| 392 | WBS-4.1.2.163.64.14 | 索赔单维护 | 1d | 2017-05-18 | 2017-05-18 | 34d | start no earlier than 2017-05-18 | TBD2 | 8h |
| 393 | WBS-4.1.2.163.64.15 | 索赔申请单状态跟踪 | 1d | 2017-05-18 | 2017-05-18 | 34d | start no earlier than 2017-05-18 | TBD2 | 8h |
| 394 | WBS-4.1.2.163.64.16 | 索赔结算单查询 | 1d | 2017-05-18 | 2017-05-18 | 34d | start no earlier than 2017-05-18 | TBD2 | 8h |
| 395 | WBS-4.1.2.163.65 | **结算管理** | 1d | 2017-05-19 | 2017-05-19 | 33d |  |  | 8h |
| 396 | WBS-4.1.2.163.65.9 | 发票扫描结果 | 1d | 2017-05-19 | 2017-05-19 | 33d | start no earlier than 2017-05-19 | TBD2 | 8h |

| ID | WBS | Task | Duration | Start | Finish | Predecessors | Total slack | Free slack | Constraint | Resources | Work |
| --- | --- | --- | --- | --- | --- | --- | --- | --- | --- | --- | --- |
| 397 | WBS-4.1.2.163.66 | **市场活动** | 1d | 2017-05-19 | 2017-05-19 |  | 33d |  |  |  | 40h |
| 398 | WBS-4.1.2.163.66.6 | 服务活动总结 | 1d | 2017-05-19 | 2017-05-19 |  | 33d |  | start no earlier than 2017-05-19 | TBD2 | 8h |
| 399 | WBS-4.1.2.163.66.7 | 服务活动总结查询 | 1d | 2017-05-19 | 2017-05-19 |  | 33d |  | start no earlier than 2017-05-19 | TBD2 | 8h |
| 400 | WBS-4.1.2.163.66.8 | 召回完成统计（DLR） | 1d | 2017-05-19 | 2017-05-19 |  | 33d |  | start no earlier than 2017-05-19 | TBD2 | 8h |
| 401 | WBS-4.1.2.163.66.9 | 召回车辆配件满足率（DLR） | 1d | 2017-05-19 | 2017-05-19 |  | 33d |  | start no earlier than 2017-05-19 | TBD2 | 8h |
| 402 | WBS-4.1.2.163.66.10 | 召回车辆查询 | 1d | 2017-05-19 | 2017-05-19 |  | 33d |  | start no earlier than 2017-05-19 | TBD2 | 8h |
| 403 | WBS-4.1.2.176 | **对外接口** | 163d? | 2016-11-14 | 2017-07-03 |  | 3d |  |  |  | 216h |
| 404 | WBS-4.1.2.176.1 | IDE001 维修工单信息接口 | 3d | 2017-05-22 | 2017-05-24 |  | 3d |  | start no earlier than 2017-05-22 |  |  |
| 405 | WBS-4.1.2.176.2 | IDE002 维修工单作废接口 | 3d | 2017-05-25 | 2017-05-27 | 404 | 3d | 0d |  | TBD14 | 24h |
| 406 | WBS-4.1.2.176.3 | IDE003 维修工单完工接口 | 3d | 2017-05-31 | 2017-06-02 | 405 | 3d | 0d |  | TBD14 | 24h |
| 407 | WBS-4.1.2.176.4 | IDE004 维修工单结算接口 | 3d | 2017-06-05 | 2017-06-07 | 406 | 3d | 0d |  | TBD14 | 24h |
| 408 | WBS-4.1.2.176.5 | IDE005 维修预约单信息接口 | 3d | 2017-06-08 | 2017-06-12 | 407 | 3d | 0d |  | TBD14 | 24h |
| 409 | WBS-4.1.2.176.6 | IDE006 维修预约单取消预约接口 | 3d | 2017-06-13 | 2017-06-15 | 408 | 3d | 0d |  | TBD14 | 24h |
| 410 | WBS-4.1.2.176.7 | DTW001 电子结算单结算上报接口 | 3d | 2017-06-16 | 2017-06-20 | 409 | 3d | 0d |  | TBD14 | 24h |
| 411 | WBS-4.1.2.176.8 | DTW002 电子结算单取消结算上报接口 | 3d | 2017-06-21 | 2017-06-23 | 410 | 3d | 0d |  | TBD14 | 24h |
| 412 | WBS-4.1.2.176.9 | MicroMsgBookingConfirmImpl（微信预约时间确认(DMS调用)） | 3d | 2017-06-26 | 2017-06-28 | 411 | 3d | 0d |  | TBD14 | 24h |
| 413 | WBS-4.1.2.176.10 | MicroMsgBookingFeedbackImpl 微信预约状态确认(DMS调用) | 3d | 2017-06-29 | 2017-07-03 | 412 | 3d |  |  | TBD14 | 24h |
